# Cronograma_v3.5

Schedule from MS Project, 2011-06-30 to 2012-06-05, A marks actual dates.
CSTI

## Calendars

- Standard: Mon-Fri 08:00-12:00, 13:00-17:00; Sat-Sun off. Exceptions (off unless hours are given): 2011-07-09 08:00-12:00, 13:00-17:00, 2011-07-12 09:00-19:00, 2011-07-28 to 2011-07-29, 2011-08-30, 2011-11-01, 2012-04-05 to 2012-04-06, 2012-05-01.

## Resources

| Resource |
| --- |
| CPSAA |
| Rita Narro |
| Manuel Landa |
| Sandra Barboza |
| John Vara |
| Edwin Pacheco |
| Sandra Barbpza |
| Fernando Gastanaudi |
| Kelly Cueva |
| AP1 |
| AP2 |
| AP1 / AP2 |
| AP1 / AP2 / Usuarios CPSAA |
| AP1 / Analista Lider CSTI |
| AP1 / AP2 / Analista Lider CSTI |
| AP1 / AP2 / AL CSTI |
| AP1 / AL CSTI |
| JP y AL (CPSAA) / AP1 y AL (CSTI) |
| JP / AL (CPSAA) - AP1 / AL (CSTI) |
| Usuario CPSAA - AP1 / AL |
| JP / AL (CPSAA) - AP1 / AL |
| AL (CSTI) |
| Usuarios (CPSAA) - AP1 / AL |
| Usuario (CPSAA) - AP1 / AL |
| AP1 / AL |
| JP (CPSAA) - AP1 / AL |
| AL / JP (CPSAA) |
| AL |
| AP (CPSAA) |
| AP1 / AP2 / AP3 |
| AP1 / AP3 |
| AP3 |
| AP2 / AP1 |
| AP1 / AP2 / AL |
| AP3 / AL |
| AP1 / AL / CPSAA |
| AP1 / Usuarios CPSAA |
| AP1 / Usuario CPSAA |
| AP2 / Usuario CPSAA |
| AP1 / AP2 Usuarios CPSAA |
| v |
| AL CPSAA |
| PA |
| AP12 |
| Usuario Lider |
| 370 |

## Schedule

| ID | WBS | Task | Duration | Start | Finish | Predecessors | Complete | Remaining | Baseline start | Baseline finish | Baseline duration | Total slack | Free slack | Constraint | Deadline | Resources | Work | Actual work |
| --- | --- | --- | --- | --- | --- | --- | --- | --- | --- | --- | --- | --- | --- | --- | --- | --- | --- | --- |
| 1 | 1 | **SAC III** | 237.63d | 2011-06-30 A | 2012-06-05 |  | 51% | 117.43d | 2011-06-30 | 2012-06-13 | 243.57d | 0d |  |  |  |  | 9521.75h | 4142.68h |
| 2 | 1.1 | **Fase: Análisis** | 59d | 2011-06-30 | 2011-09-22 |  |  |  | 2011-06-30 | 2011-09-22 | 59d | 2d |  |  |  | AP1 / AL / CPSAA | 1544h |  |
| 3 | 1.1.1 | Análisis y revisión de código | 5d | 2011-06-30 | 2011-07-06 |  |  |  | 2011-06-30 | 2011-07-06 | 5d | 2d | 0d | start no earlier than 2011-06-30 |  | AP1 | 40h |  |
| 4 | 1.1.2 | **Levantamiento de informacion** | 9d | 2011-07-07 | 2011-07-18 | 3 |  |  | 2011-07-07 | 2011-07-18 | 9d | 2d | 0d |  |  | AP1 / AL | 312h |  |
| 5 | 1.1.2.1 | **Reuniones presenciales con usuarios** | 7d | 2011-07-07 | 2011-07-14 |  |  |  | 2011-07-07 | 2011-07-14 | 7d | 2d | 0d |  |  |  | 176h |  |
| 6 | 1.1.2.1.1 | **Presentacion del sistema y revision de requerimientos de administracion** | 3d | 2011-07-07 | 2011-07-09 |  |  |  | 2011-07-07 | 2011-07-09 | 3d | 2d | 0d |  | 2011-07-12 |  | 72h |  |
| 7 | 1.1.2.1.1.1 | Reunion de coordinacion de agenda | 3d | 2011-07-07 | 2011-07-09 |  |  |  | 2011-07-07 | 2011-07-09 | 3d | 2d |  | start no earlier than 2011-07-07 |  | JP / AL (CPSAA) - AP1 / AL | 24h |  |
| 8 | 1.1.2.1.1.2 | Visión General del Sistema y Revision de funcionalidades por ejecutar administrativas | 3d | 2011-07-07 | 2011-07-09 |  |  |  | 2011-07-07 | 2011-07-09 | 3d | 2d |  | start no earlier than 2011-07-07 |  | Usuario CPSAA - AP1 / AL | 24h |  |
| 9 | 1.1.2.1.1.3 | Reestructuracion de cronograma | 1d | 2011-07-07 | 2011-07-07 |  |  |  | 2011-07-07 | 2011-07-07 | 1d | 4d |  | start no earlier than 2011-07-07 |  | AL | 8h |  |
| 10 | 1.1.2.1.1.4 | Realizacion de preguntas de funcionalidades por ejecutar (administrativas) | 2d | 2011-07-07 | 2011-07-08 |  |  |  | 2011-07-07 | 2011-07-08 | 2d | 3d |  | start no earlier than 2011-07-07 |  | AL | 16h |  |
| 11 | 1.1.2.1.2 | **Revision de requerimientos nuevos** | 4d | 2011-07-11 | 2011-07-14 | 6 |  |  | 2011-07-11 | 2011-07-14 | 4d | 104.25d |  |  |  |  | 104h |  |
| 12 | 1.1.2.1.2.1 | Revisar Requerimientos de Premezclados | 4d | 2011-07-11 | 2011-07-14 |  |  |  | 2011-07-11 | 2011-07-14 | 4d | 13.7d |  | start no earlier than 2011-07-08 |  | Usuarios (CPSAA) - AP1 / AL | 32h |  |
| 13 | 1.1.2.1.2.2 | Realizacion de consultas pendientes acerca de premezclados | 3d | 2011-07-11 | 2011-07-13 |  |  |  | 2011-07-11 | 2011-07-13 | 3d | 14.7d |  | start no earlier than 2011-07-08 |  | Usuario (CPSAA) - AP1 / AL | 24h |  |
| 14 | 1.1.2.1.2.3 | Revision de requerimientos de produccion | 2d | 2011-07-11 | 2011-07-12 |  |  |  | 2011-07-11 | 2011-07-12 | 2d | 15.7d |  | start no earlier than 2011-07-08 |  | AP1 / AL | 16h |  |
| 15 | 1.1.2.1.2.4 | Revision de funcionalidades pendientes | 2d | 2011-07-11 | 2011-07-12 |  |  |  | 2011-07-11 | 2011-07-12 | 2d | 15.7d |  | start no earlier than 2011-07-08 |  | AP1 / AL | 16h |  |
| 16 | 1.1.2.1.2.5 | Realizacion de consultas relacionadas a requerimientos de premezclados y produccion | 2d | 2011-07-11 | 2011-07-12 |  |  |  | 2011-07-11 | 2011-07-12 | 2d | 15.7d |  | start no earlier than 2011-07-08 |  | AP1 / AL | 16h |  |
| 17 | 1.1.2.2 | **Revision de avance del levantamiento de informacion y coordinaciones para semana siguiente** | 2d | 2011-07-14 | 2011-07-18 | 5 |  |  | 2011-07-14 | 2011-07-18 | 2d | 104.25d |  |  |  |  | 64h |  |
| 18 | 1.1.2.2.1 | Reunion de avance del cronograma de levantamiento de informacion | 2d | 2011-07-14 | 2011-07-18 |  |  |  | 2011-07-14 | 2011-07-18 | 2d | 13.7d |  | start no earlier than 2011-07-09 |  | JP (CPSAA) - AP1 / AL | 16h |  |
| 19 | 1.1.2.2.2 | Revision de documentacion y realizacion de bocetos pendientes de funcionalidades de administración | 2d | 2011-07-14 | 2011-07-18 |  |  |  | 2011-07-14 | 2011-07-18 | 2d | 13.7d |  | start no earlier than 2011-07-09 |  | AP1 / AL | 16h |  |
| 20 | 1.1.2.2.3 | Revision de funcionalidades nuevas tratadas en reunión | 2d | 2011-07-14 | 2011-07-18 |  |  |  | 2011-07-14 | 2011-07-18 | 2d | 13.7d |  | start no earlier than 2011-07-09 |  | AP1 / AL | 16h |  |
| 21 | 1.1.2.2.4 | Realización de bocetos de funcionalidades nuevas tratas en reunión | 2d | 2011-07-14 | 2011-07-18 |  |  |  | 2011-07-14 | 2011-07-18 | 2d | 13.7d |  | start no earlier than 2011-07-09 |  | AP1 / AL | 16h |  |
| 22 | 1.1.3 | **Realizacion de BBP** | 10d | 2011-07-18 | 2011-08-03 | 4 |  |  | 2011-07-18 | 2011-08-03 | 10d | 104.25d | 0d |  |  | AP1 / AL | 160h |  |
| 23 | 1.1.3.1 | Revision de informacion proporcionada y pendientes | 2d | 2011-07-18 | 2011-07-20 |  |  |  | 2011-07-18 | 2011-07-20 | 2d | 13.7d | 0d |  |  | AP1 / AL | 16h |  |
| 24 | 1.1.3.2 | Consolidacion de informacion recabada y prototipos | 5d | 2011-07-20 | 2011-07-27 | 23 |  |  | 2011-07-20 | 2011-07-27 | 5d | 13.7d | 0d |  |  | AP1 / AL | 40h |  |
| 25 | 1.1.3.3 | Realizacion de prototipos faltantes | 3d | 2011-07-27 | 2011-08-03 | 24 |  |  | 2011-07-27 | 2011-08-03 | 3d | 13.7d |  |  |  | AP1 / AL | 24h |  |

| ID | WBS | Task | Duration | Start | Finish | Predecessors | Complete | Remaining | Baseline start | Baseline finish | Baseline duration | Total slack | Free slack | Constraint | Resources | Work | Actual work |
| --- | --- | --- | --- | --- | --- | --- | --- | --- | --- | --- | --- | --- | --- | --- | --- | --- | --- |
| 26 | 1.1.4 | **Aprobacion de BBP** | 35d | 2011-08-03 | 2011-09-22 | 22 |  |  | 2011-08-03 | 2011-09-22 | 35d | 104.25d | 0d |  | CPSAA | 560h |  |
| 27 | 1.1.4.1 | Revision de BBP | 7d | 2011-08-03 | 2011-08-12 |  |  |  | 2011-08-03 | 2011-08-12 | 7d | 13.7d | 0d |  | AL / JP (CPSAA) | 56h |  |
| 28 | 1.1.4.2 | Coordinacion de ajustes en el documento | 26d | 2011-08-12 | 2011-09-20 | 27 |  |  | 2011-08-12 | 2011-09-20 | 26d | 13.7d | 0d |  | AL / JP (CPSAA) | 208h |  |
| 29 | 1.1.4.3 | Aprobación final | 2d | 2011-09-20 | 2011-09-22 | 28 |  |  | 2011-09-20 | 2011-09-22 | 2d | 13.7d |  |  | AL / JP (CPSAA) | 16h |  |
| 30 | 1.2 | **Fase: Desarrollo** | 178.63d | 2011-09-22 A | 2012-06-05 | 26 | 60% | 71.86d | 2011-09-22 | 2012-06-13 | 184.57d | 0d |  |  | AP1 / AP2 | 7977.75h | 4142.68h |
| 31 | 1.2.1 | **Fase 1** | 73.26d | 2011-09-22 | 2012-01-05 |  |  |  | 2011-09-22 | 2012-01-05 | 73.26d | 79.54d | 0.99d |  |  | 1687.21h |  |
| 32 | 1.2.1.1 | **Registro de Muestra de Investigación** | 15.71d | 2011-09-22 | 2011-10-14 |  |  |  | 2011-09-22 | 2011-10-14 | 15.71d | 121.48d | 0d |  | AP1 | 383.93h |  |
| 33 | 1.2.1.1.1 | Revisar descripción funcional | 0.13d | 2011-09-22 | 2011-09-22 |  |  |  | 2011-09-22 | 2011-09-22 | 0.13d | 41.94d | 0d | start no earlier than 2011-08-29 | AP1 | 1.03h |  |
| 34 | 1.2.1.1.2 | Diagramar arquitectura | 0.13d | 2011-09-22 | 2011-09-23 | 33 |  |  | 2011-09-22 | 2011-09-23 | 0.13d | 41.94d | 0d | start no earlier than 2011-08-29 | AP1 | 1.05h |  |
| 35 | 1.2.1.1.3 | Crear nueva tabla en base de datos | 0.38d | 2011-09-23 | 2011-09-23 | 34 |  |  | 2011-09-23 | 2011-09-23 | 0.38d | 41.94d | 0d | start no earlier than 2011-08-31 | AP1 | 3.04h |  |
| 36 | 1.2.1.1.4 | **Consultar muestra** | 2.13d | 2011-09-23 | 2011-09-27 | 35 |  |  | 2011-09-23 | 2011-09-27 | 2.13d | 121.48d | 0d |  | AP1 | 34.08h |  |
| 37 | 1.2.1.1.4.1 | Programar jsp busqueda con estilos (reutilizar componentes) | 1.75d | 2011-09-23 | 2011-09-27 |  |  |  | 2011-09-23 | 2011-09-27 | 1.75d | 41.94d | 0d | start no earlier than 2011-08-29 | AP1 | 14h |  |
| 38 | 1.2.1.1.4.2 | Hacer pruebas unitarias | 0.38d | 2011-09-27 | 2011-09-27 | 37 |  |  | 2011-09-27 | 2011-09-27 | 0.38d | 41.94d |  | start no earlier than 2011-09-01 | AP1 | 3.04h |  |
| 39 | 1.2.1.1.5 | **Registrar muestra** | 3.38d | 2011-09-27 | 2011-09-30 | 36 |  |  | 2011-09-27 | 2011-09-30 | 3.38d | 121.48d | 0d |  | AP1 | 66.08h |  |
| 40 | 1.2.1.1.5.1 | Programar registro (reutilizar componentes) | 1.5d | 2011-09-27 | 2011-09-29 |  |  |  | 2011-09-27 | 2011-09-29 | 1.5d | 41.94d | 0d | start no earlier than 2011-08-29 | AP1 | 12h |  |
| 41 | 1.2.1.1.5.2 | **Registrar ensayo** | 1.5d | 2011-09-29 | 2011-09-30 | 40 |  |  | 2011-09-29 | 2011-09-30 | 1.5d | 121.48d |  |  | AP1 | 24h |  |
| 42 | 1.2.1.1.5.2.1 | Programar ensayo en jsp con estilos (reutilizar componentes) | 1.5d | 2011-09-29 | 2011-09-30 |  |  |  | 2011-09-29 | 2011-09-30 | 1.5d | 41.94d | 0d |  | AP1 | 12h |  |
| 43 | 1.2.1.1.5.3 | Hacer pruebas unitarias | 0.38d | 2011-09-30 | 2011-09-30 | 42 |  |  | 2011-09-30 | 2011-09-30 | 0.38d | 41.94d |  | start no earlier than 2011-09-01 | AP1 | 3.04h |  |
| 44 | 1.2.1.1.6 | **Modificar muestra** | 1.75d | 2011-09-30 | 2011-10-04 | 39 |  |  | 2011-09-30 | 2011-10-04 | 1.75d | 121.48d | 0d |  | AP1 | 28h |  |
| 45 | 1.2.1.1.6.1 | Programar modificacion en jsp (reutilizar componentes) | 1.5d | 2011-09-30 | 2011-10-04 |  |  |  | 2011-09-30 | 2011-10-04 | 1.5d | 41.94d | 0d |  | AP1 | 12h |  |
| 46 | 1.2.1.1.6.2 | Hacer pruebas unitarias | 0.25d | 2011-10-04 | 2011-10-04 | 45 |  |  | 2011-10-04 | 2011-10-04 | 0.25d | 41.94d |  |  | AP1 | 2h |  |
| 47 | 1.2.1.1.7 | **Reemplazar Ensayo** | 2.81d | 2011-10-04 | 2011-10-07 | 44 |  |  | 2011-10-04 | 2011-10-07 | 2.81d | 121.48d | 0d |  | AP1 | 44.96h |  |
| 48 | 1.2.1.1.7.1 | Programar jsp | 2.3d | 2011-10-04 | 2011-10-06 |  |  |  | 2011-10-04 | 2011-10-06 | 2.3d | 41.94d | 0d |  | AP1 | 18.4h |  |
| 49 | 1.2.1.1.7.2 | Validar tiempo transcurrido entre fecha actual y muestra | 0.13d | 2011-10-06 | 2011-10-07 | 48 |  |  | 2011-10-06 | 2011-10-07 | 0.13d | 41.94d | 0d |  | AP1 | 1.04h |  |
| 50 | 1.2.1.1.7.3 | Validar acceso por parámetros del sistema | 0.13d | 2011-10-07 | 2011-10-07 | 49 |  |  | 2011-10-07 | 2011-10-07 | 0.13d | 41.94d | 0d |  | AP1 | 1.04h |  |
| 51 | 1.2.1.1.7.4 | Pruebas unitarias | 0.25d | 2011-10-07 | 2011-10-07 | 50 |  |  | 2011-10-07 | 2011-10-07 | 0.25d | 41.94d |  |  | AP1 | 2h |  |

Notes:
- 35: En esta actividad se está considerando: / -Modelar la nueva tabla / -Adaptar a nomenclatura existente / -Considerar tipo de muestra / -Relacionar tabla con las ya existentes
- 37: Este tiempo implica: / -Reutilizar jsp agregando los campos adicionales / -Validaciones
- 38: En esta actividad se está considerando: / -Corregir fallo con cada prueba
- 40: -Considerar que hay mas campos que validar / -Se hará el registro en 2 tablas (muestra / muestra de investigacion)
- 42: Implica revisión de codigo para reutilización
- 43: Validar: / -Registro de muestra / -Registro de ensayos / -Envío de correos
- 46: Esta validación tambien debe estar si es que se registro una muestra en bloque.
- 48: Implica adaptar el reemplazo de ensayo a la funcionalidad implementada previamente

| ID | WBS | Task | Type | Duration | Start | Finish | Predecessors | Baseline start | Baseline finish | Baseline duration | Total slack | Free slack | Resources | Work |
| --- | --- | --- | --- | --- | --- | --- | --- | --- | --- | --- | --- | --- | --- | --- |
| 52 | 1.2.1.1.8 | **Reporte de Control de Muestra de Investigación** |  | 2.5d | 2011-10-07 | 2011-10-11 | 47 | 2011-10-07 | 2011-10-11 | 2.5d | 121.48d | 0d | AP1 | 40h |
| 53 | 1.2.1.1.8.1 | Realizar consulta a la BD (considerar nueva tabla) |  | 0.25d | 2011-10-07 | 2011-10-07 |  | 2011-10-07 | 2011-10-07 | 0.25d | 41.94d | 0d | AP1 | 2h |
| 54 | 1.2.1.1.8.2 | Programar reporte en jsp (reutilizar componente de reporte control diario) |  | 2d | 2011-10-07 | 2011-10-11 | 53 | 2011-10-07 | 2011-10-11 | 2d | 41.94d | 0d | AP1 | 16h |
| 55 | 1.2.1.1.8.3 | Hacer pruebas unitarias |  | 0.25d | 2011-10-11 | 2011-10-11 | 54 | 2011-10-11 | 2011-10-11 | 0.25d | 41.94d |  | AP1 | 2h |
| 56 | 1.2.1.1.9 | **Registrar ensayo por rango de muestra (Muestra especial)** |  | 2.5d | 2011-10-11 | 2011-10-14 | 52 | 2011-10-11 | 2011-10-14 | 2.5d | 121.48d |  | AP1 | 40h |
| 57 | 1.2.1.1.9.1 | Analizar impacto en la estructura |  | 0.25d | 2011-10-11 | 2011-10-12 |  | 2011-10-11 | 2011-10-12 | 0.25d | 41.94d | 0d | AP1 | 2h |
| 58 | 1.2.1.1.9.2 | Programar jsp (reutilizando componentes) |  | 2d | 2011-10-12 | 2011-10-14 | 57 | 2011-10-12 | 2011-10-14 | 2d | 41.94d | 0d | AP1 | 16h |
| 59 | 1.2.1.1.9.3 | Hacer pruebas unitarias |  | 0.25d | 2011-10-14 | 2011-10-14 | 58 | 2011-10-14 | 2011-10-14 | 0.25d | 41.94d |  | AP1 | 2h |
| 60 | 1.2.1.2 | **Reporte por línea de producción** |  | 5.9d | 2011-09-22 | 2011-09-30 |  | 2011-09-22 | 2011-09-30 | 5.9d | 93.24d | 0d | AP2 | 94.4h |
| 61 | 1.2.1.2.1 | Revisar descripción funcional |  | 0.13d | 2011-09-22 | 2011-09-22 |  | 2011-09-22 | 2011-09-22 | 0.13d | 13.7d | 0d | AP2 | 1.04h |
| 62 | 1.2.1.2.2 | Identificar clases |  | 0.38d | 2011-09-22 | 2011-09-23 | 61 | 2011-09-22 | 2011-09-23 | 0.38d | 13.7d | 0d | AP2 | 3.04h |
| 63 | 1.2.1.2.3 | Revisar información de procesos |  | 0.38d | 2011-09-23 | 2011-09-23 | 62 | 2011-09-23 | 2011-09-23 | 0.38d | 13.7d | 0d | AP2 | 3.04h |
| 64 | 1.2.1.2.4 | Diagramar arquitectura |  | 0.25d | 2011-09-23 | 2011-09-23 | 63 | 2011-09-23 | 2011-09-23 | 0.25d | 13.7d | 0d | AP2 | 2h |
| 65 | 1.2.1.2.5 | Hito: Validar casuistica de procesos por CPSAA | milestone | 0d | 2011-09-23 | 2011-09-23 | 64 | 2011-09-23 | 2011-09-23 | 0d | 13.7d | 0d |  |  |
| 66 | 1.2.1.2.6 | Realizar consulta a la BD |  | 0.38d | 2011-09-23 | 2011-09-26 | 65 | 2011-09-23 | 2011-09-26 | 0.38d | 13.7d | 0d | AP2 | 3.04h |
| 67 | 1.2.1.2.7 | Programar jsp con estilos |  | 4d | 2011-09-26 | 2011-09-30 | 66 | 2011-09-26 | 2011-09-30 | 4d | 13.7d | 0d | AP2 | 32h |
| 68 | 1.2.1.2.8 | Pruebas unitarias |  | 0.38d | 2011-09-30 | 2011-09-30 | 67 | 2011-09-30 | 2011-09-30 | 0.38d | 13.7d |  | AP2 | 3.04h |
| 69 | 1.2.1.3 | **Generar informe control de calidad de minerales** |  | 8.26d | 2011-09-30 | 2011-10-12 | 60 | 2011-09-30 | 2011-10-12 | 8.26d | 93.24d | 0d | AP2 | 165.68h |
| 70 | 1.2.1.3.1 | Revisar descripción funcional |  | 0.13d | 2011-09-30 | 2011-09-30 |  | 2011-09-30 | 2011-09-30 | 0.13d | 13.7d | 0d | AP2 | 1.04h |
| 71 | 1.2.1.3.2 | Diagramar arquitectura |  | 0.13d | 2011-09-30 | 2011-09-30 | 70 | 2011-09-30 | 2011-09-30 | 0.13d | 13.7d | 0d | AP2 | 1.04h |
| 72 | 1.2.1.3.3 | Identificar clases |  | 0.13d | 2011-09-30 | 2011-10-03 | 71 | 2011-09-30 | 2011-10-03 | 0.13d | 13.7d | 0d | AP2 | 1.04h |
| 73 | 1.2.1.3.4 | Reestructurar tabla de base de datos |  | 0.13d | 2011-10-03 | 2011-10-03 | 72 | 2011-10-03 | 2011-10-03 | 0.13d | 13.7d | 0d | AP2 | 1.04h |
| 74 | 1.2.1.3.5 | Programar jsp con estilos |  | 3d | 2011-10-03 | 2011-10-06 | 73 | 2011-10-03 | 2011-10-06 | 3d | 13.7d | 0d | AP2 | 24h |
| 75 | 1.2.1.3.6 | Insertar registros faltantes en la base de datos |  | 0.3d | 2011-10-06 | 2011-10-06 | 74 | 2011-10-06 | 2011-10-06 | 0.3d | 13.7d | 0d | AP2 | 2.4h |
| 76 | 1.2.1.3.7 | Pruebas unitarias |  | 0.25d | 2011-10-06 | 2011-10-06 | 75 | 2011-10-06 | 2011-10-06 | 0.25d | 13.7d | 0d | AP2 | 2h |

Notes:
- 55: Implica: probar rendimiento tambien
- 58: Implica reestructurar la funcionalidad existente / Validar el rol del usuario que puede listar por muestra interna y/o externa
- 62: Implica investigar varias tablas relacionadas.
- 63: Implica revisar y obtener la información de todos los procesos, y secuencialidad, por cada una de las lineas de producción
- 67: Se deben generar varias tablas secuenciales y hacer paginación.
- 73: Considerar que se deben definir los campos, tipos de dato, nomenclatura y valores.
- 75: Considerar que hay datos que actualmente no figuran en la BD, y es necesario registrar.

| ID | WBS | Task | Duration | Start | Finish | Predecessors | Baseline start | Baseline finish | Baseline duration | Total slack | Free slack | Resources | Work |
| --- | --- | --- | --- | --- | --- | --- | --- | --- | --- | --- | --- | --- | --- |
| 77 | 1.2.1.3.8 | **Generar informe de Control de Calidad de minerales 2 (para vigilancia)** | 4.19d | 2011-10-06 | 2011-10-12 | 76 | 2011-10-06 | 2011-10-12 | 4.19d | 93.24d |  | AP2 | 67.04h |
| 78 | 1.2.1.3.8.1 | Revisar descripción funcional | 0.13d | 2011-10-06 | 2011-10-06 |  | 2011-10-06 | 2011-10-06 | 0.13d | 13.7d | 0d | AP2 | 1.04h |
| 79 | 1.2.1.3.8.2 | Diagramar arquitectura | 0.13d | 2011-10-06 | 2011-10-06 | 78 | 2011-10-06 | 2011-10-06 | 0.13d | 13.7d | 0d | AP2 | 1.04h |
| 80 | 1.2.1.3.8.3 | Identificar clases | 0.13d | 2011-10-06 | 2011-10-07 | 79 | 2011-10-06 | 2011-10-07 | 0.13d | 13.7d | 0d | AP2 | 1.04h |
| 81 | 1.2.1.3.8.4 | Reestructurar tabla de base de datos | 0.25d | 2011-10-07 | 2011-10-07 | 80 | 2011-10-07 | 2011-10-07 | 0.25d | 13.7d | 0d | AP2 | 2h |
| 82 | 1.2.1.3.8.5 | Programar jsp con estilos | 3d | 2011-10-07 | 2011-10-12 | 81 | 2011-10-07 | 2011-10-12 | 3d | 13.7d | 0d | AP2 | 24h |
| 83 | 1.2.1.3.8.6 | Insertar registros faltantes en la base de datos | 0.3d | 2011-10-12 | 2011-10-12 | 82 | 2011-10-12 | 2011-10-12 | 0.3d | 13.7d | 0d | AP2 | 2.4h |
| 84 | 1.2.1.3.8.7 | Pruebas unitarias | 0.25d | 2011-10-12 | 2011-10-12 | 83 | 2011-10-12 | 2011-10-12 | 0.25d | 13.7d |  | AP2 | 2h |
| 85 | 1.2.1.4 | **Consultar Reporte gerencial - Ensayo de Resistencia Mensual** | 3.04d | 2011-10-14 | 2011-10-19 | 32 | 2011-10-14 | 2011-10-19 | 3.04d | 121.48d | 0d | AP1 | 48.64h |
| 86 | 1.2.1.4.1 | Revisar descripción funcional | 0.13d | 2011-10-14 | 2011-10-14 |  | 2011-10-14 | 2011-10-14 | 0.13d | 41.94d | 0d | AP1 | 1.04h |
| 87 | 1.2.1.4.2 | Identificar clases | 0.13d | 2011-10-14 | 2011-10-14 | 86 | 2011-10-14 | 2011-10-14 | 0.13d | 41.94d | 0d | AP1 | 1.04h |
| 88 | 1.2.1.4.3 | Diagramar arquitectura | 0.13d | 2011-10-14 | 2011-10-14 | 87 | 2011-10-14 | 2011-10-14 | 0.13d | 41.94d | 0d | AP1 | 1.04h |
| 89 | 1.2.1.4.4 | Programar jsp con estilos | 2.4d | 2011-10-14 | 2011-10-19 | 88 | 2011-10-14 | 2011-10-19 | 2.4d | 41.94d | 0d | AP1 | 19.2h |
| 90 | 1.2.1.4.5 | Pruebas unitarias | 0.25d | 2011-10-19 | 2011-10-19 | 89 | 2011-10-19 | 2011-10-19 | 0.25d | 41.94d |  | AP1 | 2h |
| 91 | 1.2.1.5 | **Reporte Consolidado en Archivo** | 4.69d | 2011-10-19 | 2011-10-26 | 85 | 2011-10-19 | 2011-10-26 | 4.69d | 121.48d | 0d | AP1 | 75.04h |
| 92 | 1.2.1.5.1 | Revisar descripción funcional | 0.13d | 2011-10-19 | 2011-10-19 |  | 2011-10-19 | 2011-10-19 | 0.13d | 41.94d | 0d | AP1 | 1.04h |
| 93 | 1.2.1.5.2 | Identificar clases | 0.13d | 2011-10-19 | 2011-10-19 | 92 | 2011-10-19 | 2011-10-19 | 0.13d | 41.94d | 0d | AP1 | 1.04h |
| 94 | 1.2.1.5.3 | Diagramar arquitectura | 0.13d | 2011-10-19 | 2011-10-19 | 93 | 2011-10-19 | 2011-10-19 | 0.13d | 41.94d | 0d | AP1 | 1.04h |
| 95 | 1.2.1.5.4 | Programar jsp con estilos | 2d | 2011-10-19 | 2011-10-21 | 94 | 2011-10-19 | 2011-10-21 | 2d | 41.94d | 0d | AP1 | 16h |
| 96 | 1.2.1.5.5 | Programar generación de excel | 1.8d | 2011-10-21 | 2011-10-25 | 95 | 2011-10-21 | 2011-10-25 | 1.8d | 41.94d | 0d | AP1 | 14.4h |
| 97 | 1.2.1.5.6 | Pruebas unitarias | 0.25d | 2011-10-25 | 2011-10-25 | 96 | 2011-10-25 | 2011-10-25 | 0.25d | 41.94d | 0d | AP1 | 2h |
| 98 | 1.2.1.5.7 | Optimizar tiempo de respuesta | 0.25d | 2011-10-25 | 2011-10-26 | 97 | 2011-10-25 | 2011-10-26 | 0.25d | 41.94d |  | AP1 | 2h |
| 99 | 1.2.1.6 | **Registrar Lotes, Muestras y Trazabilidad** | 9.39d | 2011-10-12 | 2011-10-26 | 69 | 2011-10-12 | 2011-10-26 | 9.39d | 93.24d | 13.7d | AP2 | 150.24h |
| 100 | 1.2.1.6.1 | Revisar descripción funcional | 0.13d | 2011-10-12 | 2011-10-13 |  | 2011-10-12 | 2011-10-13 | 0.13d | 13.7d | 0d | AP2 | 1.04h |
| 101 | 1.2.1.6.2 | Diagramar arquitectura | 0.25d | 2011-10-13 | 2011-10-13 | 100 | 2011-10-13 | 2011-10-13 | 0.25d | 13.7d | 0d | AP2 | 2h |
| 102 | 1.2.1.6.3 | Identificar clases | 0.13d | 2011-10-13 | 2011-10-13 | 101 | 2011-10-13 | 2011-10-13 | 0.13d | 13.7d | 0d | AP2 | 1.04h |
| 103 | 1.2.1.6.4 | Reestructurar tablas | 0.13d | 2011-10-13 | 2011-10-13 | 102 | 2011-10-13 | 2011-10-13 | 0.13d | 13.7d | 0d | AP2 | 1.04h |
| 104 | 1.2.1.6.5 | Programar jsp y estilos | 3d | 2011-10-13 | 2011-10-18 | 103 | 2011-10-13 | 2011-10-18 | 3d | 13.7d | 0d | AP2 | 24h |
| 105 | 1.2.1.6.6 | Pruebas unitarias | 0.25d | 2011-10-18 | 2011-10-18 | 104 | 2011-10-18 | 2011-10-18 | 0.25d | 13.7d | 0d | AP2 | 2h |
| 106 | 1.2.1.6.7 | Reestructurar funcionalidad Administrar Lote | 3d | 2011-10-18 | 2011-10-21 | 105 | 2011-10-18 | 2011-10-21 | 3d | 13.7d | 0d | AP2 | 24h |
| 107 | 1.2.1.6.8 | Pruebas unitarias | 0.25d | 2011-10-21 | 2011-10-24 | 106 | 2011-10-21 | 2011-10-24 | 0.25d | 13.7d | 0d | AP2 | 2h |
| 108 | 1.2.1.6.9 | Reestructurar funcionalidad Certificado de calidad | 2d | 2011-10-24 | 2011-10-26 | 107 | 2011-10-24 | 2011-10-26 | 2d | 13.7d | 0d | AP2 | 16h |
| 109 | 1.2.1.6.10 | Pruebas unitarias | 0.25d | 2011-10-26 | 2011-10-26 | 108 | 2011-10-26 | 2011-10-26 | 0.25d | 13.7d |  | AP2 | 2h |

Notes:
- 96: Implica hacer consultas a la BD que relacionen estas entidades: Proceso, equipo, producto y todos los ensayos relacionados si es por rango de fecha. Caso contrario se mostrarán todos los ensayos por día de producción. / Para el caso de la exportación, se tendrá que mostrar en excel con determinado formato.
- 99: Está como control de cambios, porque el alcance es mayor al estimado inicialmente.

| ID | WBS | Task | Type | Duration | Start | Finish | Predecessors | Baseline start | Baseline finish | Baseline duration | Total slack | Free slack | Constraint | Resources | Work |
| --- | --- | --- | --- | --- | --- | --- | --- | --- | --- | --- | --- | --- | --- | --- | --- |
| 110 | 1.2.1.7 | **Administrar Procesos** |  | 0.75d | 2011-10-26 | 2011-10-26 | 91 | 2011-10-26 | 2011-10-26 | 0.75d | 121.48d | 0d |  | AP1 | 12h |
| 111 | 1.2.1.7.1 | Pruebas unitarias |  | 0.25d | 2011-10-26 | 2011-10-26 |  | 2011-10-26 | 2011-10-26 | 0.25d | 41.94d | 0d |  | AP1 | 2h |
| 112 | 1.2.1.7.2 | Realizar ajustes |  | 0.5d | 2011-10-26 | 2011-10-26 | 111 | 2011-10-26 | 2011-10-26 | 0.5d | 41.94d |  |  | AP1 | 4h |
| 113 | 1.2.1.8 | **Administrar Equipo** |  | 0.75d | 2011-10-26 | 2011-10-27 | 110 | 2011-10-26 | 2011-10-27 | 0.75d | 121.48d | 0d |  | AP1 | 12h |
| 114 | 1.2.1.8.1 | Pruebas unitarias |  | 0.25d | 2011-10-26 | 2011-10-27 |  | 2011-10-26 | 2011-10-27 | 0.25d | 41.94d | 0d |  | AP1 | 2h |
| 115 | 1.2.1.8.2 | Realizar ajustes |  | 0.5d | 2011-10-27 | 2011-10-27 | 114 | 2011-10-27 | 2011-10-27 | 0.5d | 41.94d |  |  | AP1 | 4h |
| 116 | 1.2.1.9 | **Administrar Planta** |  | 1.13d | 2011-10-27 | 2011-10-28 | 113 | 2011-10-27 | 2011-10-28 | 1.13d | 121.48d | 0d |  | AP1 | 18.08h |
| 117 | 1.2.1.9.1 | Programar componente |  | 0.38d | 2011-10-27 | 2011-10-28 |  | 2011-10-27 | 2011-10-28 | 0.38d | 41.94d | 0d |  | AP1 | 3.04h |
| 118 | 1.2.1.9.2 | Pruebas unitarias |  | 0.25d | 2011-10-28 | 2011-10-28 | 117 | 2011-10-28 | 2011-10-28 | 0.25d | 41.94d | 0d |  | AP1 | 2h |
| 119 | 1.2.1.9.3 | Realizar ajustes |  | 0.5d | 2011-10-28 | 2011-10-28 | 118 | 2011-10-28 | 2011-10-28 | 0.5d | 41.94d |  |  | AP1 | 4h |
| 120 | 1.2.1.10 | **Administrar Roles** |  | 0.75d | 2011-10-28 | 2011-10-31 | 116 | 2011-10-28 | 2011-10-31 | 0.75d | 121.48d | 0d |  | AP1 | 12h |
| 121 | 1.2.1.10.1 | Pruebas unitarias |  | 0.25d | 2011-10-28 | 2011-10-31 |  | 2011-10-28 | 2011-10-31 | 0.25d | 41.94d | 0d |  | AP1 | 2h |
| 122 | 1.2.1.10.2 | Realizar ajustes |  | 0.5d | 2011-10-31 | 2011-10-31 | 121 | 2011-10-31 | 2011-10-31 | 0.5d | 41.94d |  |  | AP1 | 4h |
| 123 | 1.2.1.11 | **Administrar permisos por rol** |  | 0.75d | 2011-10-31 | 2011-11-02 | 120 | 2011-10-31 | 2011-11-02 | 0.75d | 121.48d | 0d |  | AP1 | 12h |
| 124 | 1.2.1.11.1 | Pruebas unitarias |  | 0.25d | 2011-10-31 | 2011-10-31 |  | 2011-10-31 | 2011-10-31 | 0.25d | 41.94d | 0d |  | AP1 | 2h |
| 125 | 1.2.1.11.2 | Realizar ajustes |  | 0.5d | 2011-10-31 | 2011-11-02 | 124 | 2011-10-31 | 2011-11-02 | 0.5d | 41.94d |  |  | AP1 | 4h |
| 126 | 1.2.1.12 | **Administrar Parámetros de sistema** |  | 0.75d | 2011-11-02 | 2011-11-03 | 123 | 2011-11-02 | 2011-11-03 | 0.75d | 121.48d | 0d |  | AP1 | 12h |
| 127 | 1.2.1.12.1 | Pruebas unitarias |  | 0.25d | 2011-11-02 | 2011-11-02 |  | 2011-11-02 | 2011-11-02 | 0.25d | 41.94d | 0d |  | AP1 | 2h |
| 128 | 1.2.1.12.2 | Realizar ajustes |  | 0.5d | 2011-11-02 | 2011-11-03 | 127 | 2011-11-02 | 2011-11-03 | 0.5d | 41.94d |  |  | AP1 | 4h |
| 129 | 1.2.1.13 | **Registro Automatico de Ensayo Resistencia a Compresion** |  | 6.76d | 2011-11-16 | 2011-11-24 | 99 | 2011-11-16 | 2011-11-24 | 6.76d | 79.54d | 0d |  | AP2 | 108.16h |
| 130 | 1.2.1.13.1 | Hito de control: Descripción funcional enviada por CPSAA | milestone | 0d | 2011-11-16 | 2011-11-16 |  | 2011-11-16 | 2011-11-16 | 0d | 6.76d |  | start no earlier than 2011-11-16 |  |  |
| 131 | 1.2.1.13.2 | Programar job que lea el archivo en excel |  | 2d | 2011-11-16 | 2011-11-17 |  | 2011-11-16 | 2011-11-17 | 2d | 0.99d | 0d | start no earlier than 2011-11-16 | AP2 | 16h |
| 132 | 1.2.1.13.3 | Ejecutar pruebas de lectura de archivo |  | 0.38d | 2011-11-18 | 2011-11-18 | 131 | 2011-11-18 | 2011-11-18 | 0.38d | 0.99d | 0d |  | AP2 | 3.04h |
| 133 | 1.2.1.13.4 | Crear beans |  | 0.38d | 2011-11-18 | 2011-11-18 | 132 | 2011-11-18 | 2011-11-18 | 0.38d | 0.99d | 0d |  | AP2 | 3.04h |
| 134 | 1.2.1.13.5 | Validar datos del archivo |  | 0.25d | 2011-11-18 | 2011-11-21 | 133 | 2011-11-18 | 2011-11-21 | 0.25d | 0.99d | 0d |  | AP2 | 2h |
| 135 | 1.2.1.13.6 | Validar consistencia de la data en BD SAC |  | 1.25d | 2011-11-21 | 2011-11-22 | 134 | 2011-11-21 | 2011-11-22 | 1.25d | 0.99d | 0d |  | AP2 | 10h |
| 136 | 1.2.1.13.7 | Registrar datos en la BD SAC |  | 1.25d | 2011-11-22 | 2011-11-23 | 135 | 2011-11-22 | 2011-11-23 | 1.25d | 0.99d | 0d |  | AP2 | 10h |
| 137 | 1.2.1.13.8 | Configurar redondeo a la decena |  | 0.75d | 2011-11-23 | 2011-11-24 | 136 | 2011-11-23 | 2011-11-24 | 0.75d | 0.99d | 0d |  | AP2 | 6h |
| 138 | 1.2.1.13.9 | Realizar pruebas unitarias |  | 0.5d | 2011-11-24 | 2011-11-24 | 137 | 2011-11-24 | 2011-11-24 | 0.5d | 0.99d |  |  | AP2 | 4h |

Notes:
- 129: 60% a partir del 23.11.11
- 130: La descripcion funcional del requerimiento fue enviada el 11.11.11
- 131: Incluye lectura del archivo: de carpeta Generados y cambio a carpeta Procesados

| ID | WBS | Task | Duration | Start | Finish | Predecessors | Baseline start | Baseline finish | Baseline duration | Total slack | Free slack | Resources | Work |
| --- | --- | --- | --- | --- | --- | --- | --- | --- | --- | --- | --- | --- | --- |
| 139 | 1.2.1.14 | **Documentar Casos de Prueba** | 3d | 2011-11-03 | 2011-11-08 | 126 | 2011-11-03 | 2011-11-08 | 3d | 121.48d |  | AP1 | 48h |
| 140 | 1.2.1.14.1 | Realizar Casos de Prueba de Funcionalidades Nuevas | 1.5d | 2011-11-03 | 2011-11-04 |  | 2011-11-03 | 2011-11-04 | 1.5d | 41.94d | 0d | AP2 | 12h |
| 141 | 1.2.1.14.2 | Realizar Casos de Prueba de Funcionalidades Admin. Datos Maestros | 1.5d | 2011-11-04 | 2011-11-08 | 140 | 2011-11-04 | 2011-11-08 | 1.5d | 41.94d |  | AP2 | 12h |
| 142 | 1.2.1.15 | **Integración de Módulos** | 4d | 2011-11-24 | 2011-11-30 | 129 | 2011-11-24 | 2011-11-30 | 4d | 79.54d | 0d | AP1 | 96h |
| 143 | 1.2.1.15.1 | **Integrar funcionalidades nuevas** | 2d | 2011-11-24 | 2011-11-28 |  | 2011-11-24 | 2011-11-28 | 2d | 79.54d | 0d | AP1 | 32h |
| 144 | 1.2.1.15.1.1 | Revisar clases por integrar | 0.5d | 2011-11-24 | 2011-11-25 |  | 2011-11-24 | 2011-11-25 | 0.5d | 0.99d | 0d | AP1 | 4h |
| 145 | 1.2.1.15.1.2 | Integrar código | 0.5d | 2011-11-25 | 2011-11-25 | 144 | 2011-11-25 | 2011-11-25 | 0.5d | 0.99d | 0d | AP1 | 4h |
| 146 | 1.2.1.15.1.3 | Probar integración del código | 0.5d | 2011-11-25 | 2011-11-28 | 145 | 2011-11-25 | 2011-11-28 | 0.5d | 0.99d | 0d | AP1 | 4h |
| 147 | 1.2.1.15.1.4 | Hacer pruebas funcionales de integración | 0.5d | 2011-11-28 | 2011-11-28 | 146 | 2011-11-28 | 2011-11-28 | 0.5d | 0.99d |  | AP1 | 4h |
| 148 | 1.2.1.15.2 | **Integrar funcionalidades Admin. Datos Maestros** | 2d | 2011-11-28 | 2011-11-30 | 143 | 2011-11-28 | 2011-11-30 | 2d | 79.54d |  | AP1 | 32h |
| 149 | 1.2.1.15.2.1 | Revisar clases por integrar | 0.5d | 2011-11-28 | 2011-11-29 |  | 2011-11-28 | 2011-11-29 | 0.5d | 0.99d | 0d | AP1 | 4h |
| 150 | 1.2.1.15.2.2 | Integrar código | 0.5d | 2011-11-29 | 2011-11-29 | 149 | 2011-11-29 | 2011-11-29 | 0.5d | 0.99d | 0d | AP1 | 4h |
| 151 | 1.2.1.15.2.3 | Probar integración del código | 0.5d | 2011-11-29 | 2011-11-30 | 150 | 2011-11-29 | 2011-11-30 | 0.5d | 0.99d | 0d | AP1 | 4h |
| 152 | 1.2.1.15.2.4 | Hacer pruebas funcionales de integración | 0.5d | 2011-11-30 | 2011-11-30 | 151 | 2011-11-30 | 2011-11-30 | 0.5d | 0.99d |  | AP1 | 4h |
| 153 | 1.2.1.16 | **Fase: Pruebas** | 6.25d | 2011-11-30 | 2011-12-09 | 142 | 2011-11-30 | 2011-12-09 | 6.25d | 79.54d | 0d |  | 123.04h |
| 154 | 1.2.1.16.1 | Desplegar aplicación en ambiente desarrollo CSTI | 0.25d | 2011-11-30 | 2011-12-01 |  | 2011-11-30 | 2011-12-01 | 0.25d | 6d |  | AP2 | 2h |
| 155 | 1.2.1.16.2 | **Pruebas unitarias** | 1d | 2011-11-30 | 2011-12-01 |  | 2011-11-30 | 2011-12-01 | 1d | 79.54d | 0d |  | 16h |
| 156 | 1.2.1.16.2.1 | Revisar funcionalidades nuevas AP1 | 1d | 2011-11-30 | 2011-12-01 |  | 2011-11-30 | 2011-12-01 | 1d | 0.99d |  | AP1 | 8h |
| 157 | 1.2.1.16.2.2 | Revisar funcionalidades nuevas AP2 | 1d | 2011-11-30 | 2011-12-01 |  | 2011-11-30 | 2011-12-01 | 1d | 0.99d |  | AP2 | 8h |
| 158 | 1.2.1.16.3 | Coordinar despliegue en ambiente pruebas CPSAA | 0.25d | 2011-12-01 | 2011-12-02 | 155 | 2011-12-01 | 2011-12-02 | 0.25d | 0.99d | 0d | AP2 | 2h |
| 159 | 1.2.1.16.4 | **Pruebas integrales** | 5d | 2011-12-02 | 2011-12-09 | 158 | 2011-12-02 | 2011-12-09 | 5d | 79.54d |  |  | 80h |
| 160 | 1.2.1.16.4.1 | Revisar funcionalidades nuevas (A) | 3d | 2011-12-02 | 2011-12-07 |  | 2011-12-02 | 2011-12-07 | 3d | 0.99d | 0d | Usuario Lider; AP1 | 48h |
| 161 | 1.2.1.16.4.2 | Revisar funcionalidades Admin. Datos Maestros | 2d | 2011-12-07 | 2011-12-09 | 160 | 2011-12-07 | 2011-12-09 | 2d | 0.99d |  | Usuario Lider; AP1 | 32h |
| 162 | 1.2.1.16.5 | **Documentacion** | 2.88d | 2011-12-01 | 2011-12-06 | 155 | 2011-12-01 | 2011-12-06 | 2.88d | 81.91d |  |  | 23.04h |
| 163 | 1.2.1.16.5.1 | Manual de Usuario | 2d | 2011-12-01 | 2011-12-05 |  | 2011-12-01 | 2011-12-05 | 2d | 2.37d | 0d | AP2 | 16h |
| 164 | 1.2.1.16.5.2 | Manual de Instalación y Configuración del Sistema | 0.38d | 2011-12-05 | 2011-12-06 | 163 | 2011-12-05 | 2011-12-06 | 0.38d | 2.37d | 0d | AP2 | 3.04h |
| 165 | 1.2.1.16.5.3 | Informe de Capacitación y Pruebas de Aceptación del Cliente | 0.5d | 2011-12-06 | 2011-12-06 | 164 | 2011-12-06 | 2011-12-06 | 0.5d | 2.37d |  | AP2 | 4h |

| ID | WBS | Task | Duration | Start | Finish | Predecessors | Complete | Remaining | Baseline start | Baseline finish | Baseline duration | Total slack | Free slack | Resources | Work | Actual work |
| --- | --- | --- | --- | --- | --- | --- | --- | --- | --- | --- | --- | --- | --- | --- | --- | --- |
| 166 | 1.2.1.17 | **Ajustes** | 11d | 2011-12-09 | 2011-12-26 | 153 |  |  | 2011-12-09 | 2011-12-26 | 11d | 79.54d | 0d |  | 172h |  |
| 167 | 1.2.1.17.1 | Presentar formalmente observaciones | 0.5d | 2011-12-09 | 2011-12-09 |  |  |  | 2011-12-09 | 2011-12-09 | 0.5d | 0.99d | 0d | Usuario Lider | 4h |  |
| 168 | 1.2.1.17.2 | Evaluar observaciones | 0.5d | 2011-12-09 | 2011-12-12 | 167 |  |  | 2011-12-09 | 2011-12-12 | 0.5d | 0.99d | 0d | AP1; AP2 | 8h |  |
| 169 | 1.2.1.17.3 | Programar correcciones | 10d | 2011-12-12 | 2011-12-26 | 168 |  |  | 2011-12-12 | 2011-12-26 | 10d | 0.99d |  | AP1; AP2 | 160h |  |
| 170 | 1.2.1.18 | **Fase: Pase a producción** | 1d | 2011-12-26 | 2011-12-27 | 166 |  |  | 2011-12-26 | 2011-12-27 | 1d | 79.54d | 0d |  |  |  |
| 171 | 1.2.1.18.1 | **Pase a producción** | 1d | 2011-12-26 | 2011-12-27 |  |  |  | 2011-12-26 | 2011-12-27 | 1d | 79.54d |  |  |  |  |
| 172 | 1.2.1.18.1.1 | Implementar sistema en producción | 1d | 2011-12-26 | 2011-12-27 |  |  |  | 2011-12-26 | 2011-12-27 | 1d | 0.99d |  |  |  |  |
| 173 | 1.2.1.19 | **Fase: Capacitación** | 2d | 2011-12-27 | 2011-12-29 | 170 |  |  | 2011-12-27 | 2011-12-29 | 2d | 79.54d | 0d |  | 64h |  |
| 174 | 1.2.1.19.1 | **Capacitación a usuarios** | 2d | 2011-12-27 | 2011-12-29 |  |  |  | 2011-12-27 | 2011-12-29 | 2d | 79.54d |  |  | 64h |  |
| 175 | 1.2.1.19.1.1 | Preparar material | 2d | 2011-12-27 | 2011-12-29 |  |  |  | 2011-12-27 | 2011-12-29 | 2d | 0.99d |  | AP1; AL | 32h |  |
| 176 | 1.2.1.19.1.2 | Capacitar a usuarios | 2d | 2011-12-27 | 2011-12-29 |  |  |  | 2011-12-27 | 2011-12-29 | 2d | 0.99d |  | AP1; AL | 32h |  |
| 177 | 1.2.1.20 | **Fase: Post-Produccion** | 5d | 2011-12-29 | 2012-01-05 | 173 |  |  | 2011-12-29 | 2012-01-05 | 5d | 79.54d |  |  | 80h |  |
| 178 | 1.2.1.20.1 | Programar correcciones | 5d | 2011-12-29 | 2012-01-05 |  |  |  | 2011-12-29 | 2012-01-05 | 5d | 0.99d |  | AP1; AP2 | 80h |  |
| 179 | 1.2.2 | **Fase 2** | 104.38d | 2012-01-06 A | 2012-06-05 | 31 | 77% | 24.37d | 2012-01-05 | 2012-06-13 | 111.31d | 0d |  |  | 4861.51h | 3391.83h |
| 180 | 1.2.2.1 | **Desarrollo** | 86.26d | 2012-01-06 A | 2012-05-10 |  | 91% | 7.49d | 2012-01-05 | 2012-04-03 | 63.76d | 9.48d |  |  | 3558.15h | 3199.83h |
| 181 | 1.2.2.1.1 | **Registro de Muestra de Investigación (Envío de valores de ensayo y comentarios por correo electrónico)** | 2d | 2012-01-06 A | 2012-01-09 A |  | 100% |  | 2012-01-05 | 2012-01-11 | 4d |  |  | AP1 | 48h | 48h |
| 182 | 1.2.2.1.1.1 | Implementar clase | 2d | 2012-01-06 A | 2012-01-09 A |  | 100% |  | 2012-01-05 | 2012-01-11 | 4d |  |  | AP1 | 16h | 16h |
| 183 | 1.2.2.1.1.2 | Pruebas unitarias | 2d | 2012-01-06 A | 2012-01-09 A |  | 100% |  | 2012-01-05 | 2012-01-11 | 4d |  |  | AP1 | 16h | 16h |
| 184 | 1.2.2.1.2 | **Iconos de acceso directo** | 13d | 2012-01-18 A | 2012-02-03 A | 181 | 100% |  | 2012-01-11 | 2012-01-18 | 5.88d |  |  | AP1 | 232h | 232h |
| 185 | 1.2.2.1.2.1 | Revisar descripción funcional | 1d | 2012-01-18 A | 2012-01-18 A |  | 100% |  | 2012-01-11 | 2012-01-11 | 0.13d |  |  | AP1 | 8h | 8h |
| 186 | 1.2.2.1.2.2 | Diagramar arquitectura | 1d | 2012-01-18 A | 2012-01-18 A | 185 | 100% |  | 2012-01-11 | 2012-01-11 | 0.25d |  |  | AP1 | 8h | 8h |
| 187 | 1.2.2.1.2.3 | Programar jsp con estilos | 7d | 2012-01-18 A | 2012-01-26 A | 186 | 100% |  | 2012-01-11 | 2012-01-18 | 5d |  |  | AP1 | 56h | 56h |
| 188 | 1.2.2.1.2.4 | Pruebas unitarias | 7d | 2012-01-26 A | 2012-02-03 A | 187 | 100% |  | 2012-01-18 | 2012-01-18 | 0.5d |  |  | AP1 | 56h | 56h |
| 189 | 1.2.2.1.3 | **Reemplazar Ensayo (Cementos y Premezclados)** | 18d | 2012-02-06 A | 2012-02-29 A | 184 | 100% |  | 2012-01-18 | 2012-01-24 | 3.2d |  |  | AP1 | 312h | 312h |
| 190 | 1.2.2.1.3.1 | Revisar descripción funcional | 1d | 2012-02-06 A | 2012-02-06 A |  | 100% |  | 2012-01-18 | 2012-01-19 | 0.13d |  |  | AP1 | 8h | 8h |
| 191 | 1.2.2.1.3.2 | Identificar clases | 1d | 2012-02-06 A | 2012-02-06 A | 190 | 100% |  | 2012-01-19 | 2012-01-19 | 0.13d |  |  | AP1 | 8h | 8h |
| 192 | 1.2.2.1.3.3 | Diagramar arquitectura | 1d | 2012-02-06 A | 2012-02-06 A | 191 | 100% |  | 2012-01-19 | 2012-01-19 | 0.13d |  |  | AP1 | 8h | 8h |
| 193 | 1.2.2.1.3.4 | Programar jsp con estilos | 9d | 2012-02-06 A | 2012-02-16 A | 192 | 100% |  | 2012-01-19 | 2012-01-23 | 2.3d |  |  | AP1 | 72h | 72h |
| 194 | 1.2.2.1.3.5 | Validar tiempo transcurrido entre fecha actual y muestra | 1d | 2012-02-20 A | 2012-02-20 A | 193 | 100% |  | 2012-01-23 | 2012-01-23 | 0.13d |  |  | AP1 | 8h | 8h |
| 195 | 1.2.2.1.3.6 | Validar acceso por parámetros del sistema | 1d | 2012-02-20 A | 2012-02-20 A | 194 | 100% |  | 2012-01-23 | 2012-01-23 | 0.13d |  |  | AP1 | 8h | 8h |
| 196 | 1.2.2.1.3.7 | Pruebas unitarias | 7d | 2012-02-21 A | 2012-02-29 A | 195 | 100% |  | 2012-01-23 | 2012-01-24 | 0.25d |  |  | AP1 | 56h | 56h |

Notes:
- 169: -Se agregaron 5 controles de cambios para la primera fase
- 184: -Se suspendió implementación el 10.01.12 porque solicitaron un control de cambios para reporte consolidado en archivo./ -Este control de cambios duró hasta el martes 17.01.12 / -El 20.01.12, el programador estuvo levantando una observación de reporte consolidado.
- 186: Implica identificar tambien la funcionalidad existente: Registrar ensayo por rango de muestra.

| ID | WBS | Task | Duration | Start | Finish | Predecessors | Complete | Baseline start | Baseline finish | Baseline duration | Total slack | Free slack | Constraint | Resources | Work | Actual work |
| --- | --- | --- | --- | --- | --- | --- | --- | --- | --- | --- | --- | --- | --- | --- | --- | --- |
| 197 | 1.2.2.1.4 | **Administrar Id de Lotes y Ensayos** | 10d | 2012-01-12 A | 2012-01-25 A |  | 100% | 2012-01-05 | 2012-01-10 | 3.01d |  |  |  | AP2 | 176h | 176h |
| 198 | 1.2.2.1.4.1 | Revisar descripción funcional | 1d | 2012-01-12 A | 2012-01-12 A |  | 100% | 2012-01-05 | 2012-01-05 | 0.13d |  |  |  | AP2 | 8h | 8h |
| 199 | 1.2.2.1.4.2 | Diagramar arquitectura | 1d | 2012-01-12 A | 2012-01-12 A | 198 | 100% | 2012-01-05 | 2012-01-05 | 0.13d |  |  |  | AP2 | 8h | 8h |
| 200 | 1.2.2.1.4.3 | Programar | 7d | 2012-01-12 A | 2012-01-20 A | 199 | 100% | 2012-01-05 | 2012-01-09 | 2.5d |  |  |  | AP2 | 56h | 56h |
| 201 | 1.2.2.1.4.4 | Pruebas unitarias | 3d | 2012-01-23 A | 2012-01-25 A | 200 | 100% | 2012-01-09 | 2012-01-10 | 0.25d |  |  |  | AP2 | 24h | 24h |
| 202 | 1.2.2.1.5 | **Mejoras menores** | 10d | 2012-04-23 | 2012-05-07 |  |  | 2012-03-20 | 2012-04-03 | 10d | 11.74d | 0d |  | AP2 | 103.99h |  |
| 203 | 1.2.2.1.5.1 | Revisar descripción funcional | 0.13d | 2012-04-23 | 2012-04-23 |  |  | 2012-03-20 | 2012-03-20 | 0.13d | 11.74d | 0d | start no earlier than 2012-01-05 | AP1 | 1.03h |  |
| 204 | 1.2.2.1.5.2 | Analizar impacto en funcionalidades | 0.13d | 2012-04-23 | 2012-04-23 | 203 |  | 2012-03-20 | 2012-03-21 | 0.13d | 11.74d | 0d | start no earlier than 2012-01-05 | AP1 | 1.04h |  |
| 205 | 1.2.2.1.5.3 | Diagramar arquitectura | 0.13d | 2012-04-23 | 2012-04-23 | 204 |  | 2012-03-21 | 2012-03-21 | 0.13d | 11.74d | 0d | start no earlier than 2012-01-05 | AP1 | 1.04h |  |
| 206 | 1.2.2.1.5.4 | Programar | 2d | 2012-04-23 | 2012-04-25 | 205 |  | 2012-03-21 | 2012-03-23 | 2d | 11.74d | 0d | start no earlier than 2012-01-05 | AP1 | 16h |  |
| 207 | 1.2.2.1.5.5 | Pruebas unitarias | 0.61d | 2012-04-25 | 2012-04-25 | 206 |  | 2012-03-23 | 2012-03-23 | 0.61d | 11.74d | 0d | start no earlier than 2012-01-10 | AP1 | 4.88h |  |
| 208 | 1.2.2.1.5.6 | Tiempo por compensación de 2 funcionalidades retiradas | 7d | 2012-04-25 | 2012-05-07 | 207 |  | 2012-03-23 | 2012-04-03 | 7d | 11.74d |  |  |  |  |  |
| 209 | 1.2.2.1.6 | **Administrar Grupo de Tipo de Ensayo** | 4d | 2012-02-06 A | 2012-02-09 A | 221 | 100% | 2012-01-13 | 2012-01-19 | 3.76d |  |  |  | AP2 | 88h | 88h |
| 210 | 1.2.2.1.6.1 | Revisar descripción funcional | 1d | 2012-02-06 A | 2012-02-06 A |  | 100% | 2012-01-13 | 2012-01-13 | 0.13d |  |  | start no earlier than 2012-01-10 | AP2 | 8h | 8h |
| 211 | 1.2.2.1.6.2 | Diagramar arquitectura | 1d | 2012-02-06 A | 2012-02-06 A | 210 | 100% | 2012-01-13 | 2012-01-16 | 0.13d |  |  | start no earlier than 2012-01-10 | AP2 | 8h | 8h |
| 212 | 1.2.2.1.6.3 | Identificar clases | 1d | 2012-02-06 A | 2012-02-06 A | 211 | 100% | 2012-01-16 | 2012-01-16 | 0.25d |  |  | start no earlier than 2012-01-10 | AP2 | 8h | 8h |
| 213 | 1.2.2.1.6.4 | Programar jsp con estilos | 3d | 2012-02-06 A | 2012-02-08 A | 212 | 100% | 2012-01-16 | 2012-01-19 | 3d |  |  | start no earlier than 2012-01-10 | AP2 | 24h | 24h |
| 214 | 1.2.2.1.6.5 | Pruebas unitarias | 1d | 2012-02-09 A | 2012-02-09 A | 213 | 100% | 2012-01-19 | 2012-01-19 | 0.25d |  |  | start no earlier than 2012-01-13 | AP2 | 8h | 8h |
| 215 | 1.2.2.1.7 | **Administrar Tipo de Ensayo** | 10d | 2012-02-09 A | 2012-02-22 A | 209 | 100% | 2012-01-19 | 2012-01-25 | 3.76d |  |  |  | AP2 | 184h | 184h |
| 216 | 1.2.2.1.7.1 | Revisar descripción funcional | 1d | 2012-02-09 A | 2012-02-09 A |  | 100% | 2012-01-19 | 2012-01-19 | 0.13d |  |  | start no earlier than 2011-10-03 | AP2 | 8h | 8h |
| 217 | 1.2.2.1.7.2 | Diagramar arquitectura | 1d | 2012-02-09 A | 2012-02-09 A | 216 | 100% | 2012-01-19 | 2012-01-19 | 0.13d |  |  | start no earlier than 2011-10-03 | AP2 | 8h | 8h |
| 218 | 1.2.2.1.7.3 | Identificar clases | 1d | 2012-02-09 A | 2012-02-09 A | 217 | 100% | 2012-01-19 | 2012-01-20 | 0.25d |  |  | start no earlier than 2011-10-03 | AP2 | 8h | 8h |
| 219 | 1.2.2.1.7.4 | Programar jsp con estilos | 9d | 2012-02-09 A | 2012-02-21 A | 218 | 100% | 2012-01-20 | 2012-01-25 | 3d |  |  | start no earlier than 2011-10-04 | AP2 | 72h | 72h |
| 220 | 1.2.2.1.7.5 | Pruebas unitarias | 1d | 2012-02-22 A | 2012-02-22 A | 219 | 100% | 2012-01-25 | 2012-01-25 | 0.25d |  |  | start no earlier than 2011-10-07 | AP2 | 8h | 8h |

Notes:
- 197: El 11.01.12, soporte incidencia. / El 12.01.12, se empezó con la implementación de este requerimiento / El 17.01.12: En la mañana se realizó soporte indicencia. El recurso retomó sus actividades el mismo 17.01.12 por la tarde / El 20.01.12: el programador fue asignado para ver una observación de Reporte por línea de producción / El 23.01.12: soporte incidencia
- 208: -De los tres reportes eliminados del alcance, dos reportes estaban asignados al recurso AP2, por lo que, de acuerdo a lo coordinado, la duración del control de cambios número 20 sería canjeada por la duración de esos reportes eliminados. Para efectos de ajuste deL cronograma, se está tomando esta actividad para compensarla con la duración de dos reportes eliminados.

| ID | WBS | Task | Duration | Start | Finish | Predecessors | Complete | Baseline start | Baseline finish | Baseline duration | Constraint | Resources | Work | Actual work |
| --- | --- | --- | --- | --- | --- | --- | --- | --- | --- | --- | --- | --- | --- | --- |
| 221 | 1.2.2.1.8 | **Administrar matriz de tratamiento por producto y proceso** | 7d | 2012-01-26 A | 2012-02-03 A | 197 | 100% | 2012-01-10 | 2012-01-13 | 3.76d |  | AP2 | 136h | 136h |
| 222 | 1.2.2.1.8.1 | Revisar descripción funcional | 1d | 2012-01-26 A | 2012-01-26 A |  | 100% | 2012-01-10 | 2012-01-10 | 0.13d | start no earlier than 2012-01-10 | AP2 | 8h | 8h |
| 223 | 1.2.2.1.8.2 | Diagramar arquitectura | 1d | 2012-01-26 A | 2012-01-26 A | 222 | 100% | 2012-01-10 | 2012-01-10 | 0.13d | start no earlier than 2012-01-10 | AP2 | 8h | 8h |
| 224 | 1.2.2.1.8.3 | Identificar clases | 1d | 2012-01-26 A | 2012-01-26 A | 223 | 100% | 2012-01-10 | 2012-01-10 | 0.25d | start no earlier than 2012-01-10 | AP2 | 8h | 8h |
| 225 | 1.2.2.1.8.4 | Programar jsp con estilos | 6d | 2012-01-26 A | 2012-02-02 A | 224 | 100% | 2012-01-10 | 2012-01-13 | 3d | start no earlier than 2012-01-10 | AP2 | 48h | 48h |
| 226 | 1.2.2.1.8.5 | Pruebas unitarias | 1d | 2012-02-03 A | 2012-02-03 A | 225 | 100% | 2012-01-13 | 2012-01-13 | 0.25d | start no earlier than 2012-01-13 | AP2 | 8h | 8h |
| 227 | 1.2.2.1.9 | **Administrar Producto** | 3d | 2012-03-05 A | 2012-03-07 A | 245 | 100% | 2012-02-03 | 2012-02-09 | 3.76d |  | AP2 | 80h | 80h |
| 228 | 1.2.2.1.9.1 | Revisar descripción funcional | 1d | 2012-03-05 A | 2012-03-05 A |  | 100% | 2012-02-03 | 2012-02-03 | 0.13d | start no earlier than 2012-01-10 | AP2 | 8h | 8h |
| 229 | 1.2.2.1.9.2 | Diagramar arquitectura | 1d | 2012-03-05 A | 2012-03-05 A | 228 | 100% | 2012-02-03 | 2012-02-06 | 0.13d | start no earlier than 2012-01-10 | AP2 | 8h | 8h |
| 230 | 1.2.2.1.9.3 | Identificar clases | 1d | 2012-03-05 A | 2012-03-05 A | 229 | 100% | 2012-02-06 | 2012-02-06 | 0.25d | start no earlier than 2012-01-10 | AP2 | 8h | 8h |
| 231 | 1.2.2.1.9.4 | Programar jsp con estilos | 2d | 2012-03-05 A | 2012-03-06 A | 230 | 100% | 2012-02-06 | 2012-02-09 | 3d | start no earlier than 2012-01-10 | AP2 | 16h | 16h |
| 232 | 1.2.2.1.9.5 | Pruebas unitarias | 2d | 2012-03-06 A | 2012-03-07 A | 231 | 100% | 2012-02-09 | 2012-02-09 | 0.25d |  | AP2 | 16h | 16h |
| 233 | 1.2.2.1.10 | **Administrar Puesto de Trabajo** | 7d | 2012-03-01 A | 2012-03-09 A | 189 | 100% | 2012-01-24 | 2012-01-27 | 3.76d |  | AP1 | 136h | 136h |
| 234 | 1.2.2.1.10.1 | Revisar descripción funcional | 1d | 2012-03-01 A | 2012-03-01 A |  | 100% | 2012-01-24 | 2012-01-24 | 0.13d | start no earlier than 2012-01-05 | AP1 | 8h | 8h |
| 235 | 1.2.2.1.10.2 | Diagramar arquitectura | 1d | 2012-03-01 A | 2012-03-01 A | 234 | 100% | 2012-01-24 | 2012-01-24 | 0.13d | start no earlier than 2012-01-05 | AP1 | 8h | 8h |
| 236 | 1.2.2.1.10.3 | Identificar clases | 1d | 2012-03-01 A | 2012-03-01 A | 235 | 100% | 2012-01-24 | 2012-01-24 | 0.25d | start no earlier than 2012-01-05 | AP1 | 8h | 8h |
| 237 | 1.2.2.1.10.4 | Programar jsp con estilos | 6d | 2012-03-01 A | 2012-03-08 A | 236 | 100% | 2012-01-24 | 2012-01-27 | 3d | start no earlier than 2012-01-05 | AP1 | 48h | 48h |
| 238 | 1.2.2.1.10.5 | Pruebas unitarias | 1d | 2012-03-09 A | 2012-03-09 A | 237 | 100% | 2012-01-27 | 2012-01-27 | 0.25d | start no earlier than 2012-01-10 | AP1 | 8h | 8h |
| 239 | 1.2.2.1.11 | **Administrar Medidas Correctivas por Tipo de Ensayo** | 6d | 2012-02-23 A | 2012-03-01 A | 215 | 100% | 2012-01-25 | 2012-01-31 | 3.76d |  | AP2 | 128h | 128h |
| 240 | 1.2.2.1.11.1 | Revisar descripción funcional | 1d | 2012-02-23 A | 2012-02-23 A |  | 100% | 2012-01-25 | 2012-01-25 | 0.13d | start no earlier than 2012-01-05 | AP1 | 8h | 8h |
| 241 | 1.2.2.1.11.2 | Diagramar arquitectura | 1d | 2012-02-23 A | 2012-02-23 A | 240 | 100% | 2012-01-25 | 2012-01-25 | 0.13d | start no earlier than 2012-01-05 | AP1 | 8h | 8h |
| 242 | 1.2.2.1.11.3 | Identificar clases | 1d | 2012-02-23 A | 2012-02-23 A | 241 | 100% | 2012-01-25 | 2012-01-25 | 0.25d | start no earlier than 2012-01-05 | AP1 | 8h | 8h |
| 243 | 1.2.2.1.11.4 | Programar jsp con estilos | 2d | 2012-02-23 A | 2012-02-24 A | 242 | 100% | 2012-01-25 | 2012-01-30 | 3d | start no earlier than 2012-01-05 | AP1 | 16h | 16h |
| 244 | 1.2.2.1.11.5 | Pruebas unitarias | 5d | 2012-02-24 A | 2012-03-01 A | 243 | 100% | 2012-01-30 | 2012-01-31 | 0.25d | start no earlier than 2012-01-10 | AP1 | 40h | 40h |

Notes:
- 233: La funcionalidad "Administrar Puesto de Trabajo" no estuvo en el RFP, sino "Administrar Puesto de Trabajo por Responsable"

| ID | WBS | Task | Duration | Start | Finish | Predecessors | Complete | Baseline start | Baseline finish | Baseline duration | Constraint | Resources | Work | Actual work |
| --- | --- | --- | --- | --- | --- | --- | --- | --- | --- | --- | --- | --- | --- | --- |
| 245 | 1.2.2.1.12 | **Administrar Responsables por Medida Correctiva** | 2d | 2012-03-01 A | 2012-03-02 A | 239 | 100% | 2012-01-31 | 2012-02-03 | 3.76d |  | AP2 | 64h | 64h |
| 246 | 1.2.2.1.12.1 | Revisar descripción funcional | 1d | 2012-03-01 A | 2012-03-01 A |  | 100% | 2012-01-31 | 2012-01-31 | 0.13d | start no earlier than 2012-01-05 | AP1 | 8h | 8h |
| 247 | 1.2.2.1.12.2 | Diagramar arquitectura | 1d | 2012-03-01 A | 2012-03-01 A | 246 | 100% | 2012-01-31 | 2012-01-31 | 0.13d | start no earlier than 2012-01-05 | AP1 | 8h | 8h |
| 248 | 1.2.2.1.12.3 | Identificar clases | 1d | 2012-03-01 A | 2012-03-01 A | 247 | 100% | 2012-01-31 | 2012-01-31 | 0.25d | start no earlier than 2012-01-05 | AP1 | 8h | 8h |
| 249 | 1.2.2.1.12.4 | Programar jsp con estilos | 2d | 2012-03-01 A | 2012-03-02 A | 248 | 100% | 2012-01-31 | 2012-02-03 | 3d | start no earlier than 2012-01-05 | AP1 | 16h | 16h |
| 250 | 1.2.2.1.12.5 | Pruebas unitarias | 1d | 2012-03-02 A | 2012-03-02 A | 249 | 100% | 2012-02-03 | 2012-02-03 | 0.25d | start no earlier than 2012-01-10 | AP1 | 8h | 8h |
| 251 | 1.2.2.1.13 | **Administrar Roles por puesto de trabajo** | 3d | 2012-03-12 A | 2012-03-14 A | 233 | 100% | 2012-01-27 | 2012-02-01 | 2.76d |  | AP1 | 72h | 72h |
| 252 | 1.2.2.1.13.1 | Revisar descripción funcional | 1d | 2012-03-12 A | 2012-03-12 A |  | 100% | 2012-01-27 | 2012-01-27 | 0.13d | finish no earlier than 2012-01-05 | AP1 | 8h | 8h |
| 253 | 1.2.2.1.13.2 | Diagramar arquitectura | 1d | 2012-03-12 A | 2012-03-12 A | 252 | 100% | 2012-01-27 | 2012-01-30 | 0.13d | finish no earlier than 2012-01-05 | AP1 | 8h | 8h |
| 254 | 1.2.2.1.13.3 | Identificar clases | 1d | 2012-03-12 A | 2012-03-12 A | 253 | 100% | 2012-01-30 | 2012-01-30 | 0.25d | start no earlier than 2012-01-05 | AP1 | 8h | 8h |
| 255 | 1.2.2.1.13.4 | Programar jsp con estilos | 2d | 2012-03-12 A | 2012-03-13 A | 254 | 100% | 2012-01-30 | 2012-02-01 | 2d | start no earlier than 2012-01-05 | AP1 | 16h | 16h |
| 256 | 1.2.2.1.13.5 | Pruebas unitarias | 1d | 2012-03-14 A | 2012-03-14 A | 255 | 100% | 2012-02-01 | 2012-02-01 | 0.25d | start no earlier than 2012-01-09 | AP1 | 8h | 8h |
| 257 | 1.2.2.1.14 | **Administrar Información de Auditoria** | 5d | 2012-03-28 A | 2012-04-03 A | 251 | 100% | 2012-02-01 | 2012-02-09 | 5.89d |  | AP1 | 136h | 136h |
| 258 | 1.2.2.1.14.1 | Revisar descripción funcional | 1d | 2012-03-28 A | 2012-03-28 A |  | 100% | 2012-02-01 | 2012-02-01 | 0.13d | finish no earlier than 2012-01-09 | AP1 | 8h | 8h |
| 259 | 1.2.2.1.14.2 | Diagramar arquitectura | 1d | 2012-03-28 A | 2012-03-28 A | 258 | 100% | 2012-02-01 | 2012-02-01 | 0.13d | finish no earlier than 2012-01-10 | AP1 | 8h | 8h |
| 260 | 1.2.2.1.14.3 | Crear tabla en BD | 1d | 2012-03-28 A | 2012-03-28 A | 259 | 100% | 2012-02-01 | 2012-02-02 | 0.13d | finish no earlier than 2012-01-10 | AP1 | 8h | 8h |
| 261 | 1.2.2.1.14.4 | Programar generación de log ante actualización de BD | 4d | 2012-03-28 A | 2012-04-02 A | 260 | 100% | 2012-02-02 | 2012-02-06 | 2d | start no earlier than 2012-01-10 | AP1 | 32h | 32h |
| 262 | 1.2.2.1.14.5 | Programar jsp con estilos | 4d | 2012-03-28 A | 2012-04-02 A | 261 | 100% | 2012-02-06 | 2012-02-09 | 3d | start no earlier than 2012-01-12 | AP1 | 32h | 32h |
| 263 | 1.2.2.1.14.6 | Pruebas unitarias | 1d | 2012-04-03 A | 2012-04-03 A | 262 | 100% | 2012-02-09 | 2012-02-09 | 0.5d | start no earlier than 2012-01-13 | AP1 | 8h | 8h |
| 264 | 1.2.2.1.15 | **Administrar Línea de Producto** | 3d | 2012-03-26 A | 2012-03-28 A | 227 | 100% | 2012-02-09 | 2012-02-14 | 2.76d |  | AP2 | 80h | 80h |
| 265 | 1.2.2.1.15.1 | Revisar descripción funcional | 1d | 2012-03-26 A | 2012-03-26 A |  | 100% | 2012-02-09 | 2012-02-09 | 0.13d | finish no earlier than 2012-01-05 | AP2 | 8h | 8h |
| 266 | 1.2.2.1.15.2 | Diagramar arquitectura | 1d | 2012-03-26 A | 2012-03-26 A | 265 | 100% | 2012-02-09 | 2012-02-09 | 0.13d | finish no earlier than 2012-01-05 | AP2 | 8h | 8h |
| 267 | 1.2.2.1.15.3 | Identificar clases | 1d | 2012-03-26 A | 2012-03-26 A | 266 | 100% | 2012-02-09 | 2012-02-10 | 0.25d | start no earlier than 2012-01-05 | AP2 | 8h | 8h |
| 268 | 1.2.2.1.15.4 | Programar jsp con estilos | 3d | 2012-03-26 A | 2012-03-28 A | 267 | 100% | 2012-02-10 | 2012-02-14 | 2d | start no earlier than 2012-01-05 | AP2 | 24h | 24h |
| 269 | 1.2.2.1.15.5 | Pruebas unitarias | 1d | 2012-03-28 A | 2012-03-28 A | 268 | 100% | 2012-02-14 | 2012-02-14 | 0.25d | start no earlier than 2012-01-09 | AP2 | 8h | 8h |

Notes:
- 257: El 20.01.12: R.Narro indicó que harán cambios en la definición, luego de varias coordinaciones, recien el 13.02.12, se dió por cerrado la definición completa.
- 264: -El 30.03.12 se hizo la siguiente consulta: se envió correo a R.Narro y E.Pacheco, consultando lo de las líneas de producto, si se listan todas o por alcance del usuario. / -Al 04.04.12: No se tiene respuesta a la consulta.

| ID | WBS | Task | Duration | Start | Finish | Predecessors | Complete | Baseline start | Baseline finish | Baseline duration | Constraint | Resources | Work | Actual work |
| --- | --- | --- | --- | --- | --- | --- | --- | --- | --- | --- | --- | --- | --- | --- |
| 270 | 1.2.2.1.16 | **Administrar Responsable** | 4d | 2012-03-29 A | 2012-04-03 A | 264 | 100% | 2012-02-14 | 2012-02-20 | 3.76d |  | AP2 | 88h | 88h |
| 271 | 1.2.2.1.16.1 | Revisar descripción funcional | 1d | 2012-03-29 A | 2012-03-29 A |  | 100% | 2012-02-14 | 2012-02-14 | 0.13d | finish no earlier than 2012-01-09 | AP2 | 8h | 8h |
| 272 | 1.2.2.1.16.2 | Diagramar arquitectura | 1d | 2012-03-29 A | 2012-03-29 A | 271 | 100% | 2012-02-14 | 2012-02-14 | 0.13d | finish no earlier than 2012-01-10 | AP2 | 8h | 8h |
| 273 | 1.2.2.1.16.3 | Identificar clases | 1d | 2012-03-29 A | 2012-03-29 A | 272 | 100% | 2012-02-14 | 2012-02-14 | 0.25d | start no earlier than 2012-01-10 | AP2 | 8h | 8h |
| 274 | 1.2.2.1.16.4 | Programar jsp con estilos | 3d | 2012-03-29 A | 2012-04-02 A | 273 | 100% | 2012-02-14 | 2012-02-17 | 3d | start no earlier than 2012-01-10 | AP2 | 24h | 24h |
| 275 | 1.2.2.1.16.5 | Pruebas unitarias | 1d | 2012-04-03 A | 2012-04-03 A | 274 | 100% | 2012-02-17 | 2012-02-20 | 0.25d | start no earlier than 2012-01-13 | AP2 | 8h | 8h |
| 276 | 1.2.2.1.17 | **Administrar Turno** | 5d | 2012-04-12 A | 2012-04-18 A | 270 | 100% | 2012-02-20 | 2012-02-22 | 2.76d |  | AP2 | 104h | 104h |
| 277 | 1.2.2.1.17.1 | Revisar descripción funcional | 1d | 2012-04-12 A | 2012-04-12 A |  | 100% | 2012-02-20 | 2012-02-20 | 0.13d | finish no earlier than 2012-01-05 | AP2 | 8h | 8h |
| 278 | 1.2.2.1.17.2 | Diagramar arquitectura | 1d | 2012-04-12 A | 2012-04-12 A | 277 | 100% | 2012-02-20 | 2012-02-20 | 0.13d | finish no earlier than 2012-01-05 | AP2 | 8h | 8h |
| 279 | 1.2.2.1.17.3 | Identificar clases | 1d | 2012-04-12 A | 2012-04-12 A | 278 | 100% | 2012-02-20 | 2012-02-20 | 0.25d | start no earlier than 2012-01-05 | AP2 | 8h | 8h |
| 280 | 1.2.2.1.17.4 | Programar jsp con estilos | 4d | 2012-04-12 A | 2012-04-17 A | 279 | 100% | 2012-02-20 | 2012-02-22 | 2d | start no earlier than 2012-01-05 | AP2 | 32h | 32h |
| 281 | 1.2.2.1.17.5 | Pruebas unitarias | 1d | 2012-04-18 A | 2012-04-18 A | 280 | 100% | 2012-02-22 | 2012-02-22 | 0.25d | start no earlier than 2012-01-09 | AP2 | 8h | 8h |
| 282 | 1.2.2.1.18 | **Administrar Empresa** | 4d | 2012-01-31 A | 2012-02-03 A | 257 | 100% | 2012-02-09 | 2012-02-14 | 2.76d |  | AP1 | 88h | 88h |
| 283 | 1.2.2.1.18.1 | Revisar descripción funcional | 1d | 2012-01-31 A | 2012-01-31 A |  | 100% | 2012-02-09 | 2012-02-09 | 0.13d | finish no earlier than 2012-01-09 | AP2 | 8h | 8h |
| 284 | 1.2.2.1.18.2 | Diagramar arquitectura | 1d | 2012-01-31 A | 2012-01-31 A | 283 | 100% | 2012-02-09 | 2012-02-09 | 0.13d | finish no earlier than 2012-01-10 | AP2 | 8h | 8h |
| 285 | 1.2.2.1.18.3 | Identificar clases | 1d | 2012-01-31 A | 2012-01-31 A | 284 | 100% | 2012-02-09 | 2012-02-10 | 0.25d | start no earlier than 2012-01-09 | AP2 | 8h | 8h |
| 286 | 1.2.2.1.18.4 | Programar jsp con estilos | 3d | 2012-01-31 A | 2012-02-02 A | 285 | 100% | 2012-02-10 | 2012-02-14 | 2d | start no earlier than 2012-01-10 | AP2 | 24h | 24h |
| 287 | 1.2.2.1.18.5 | Pruebas unitarias | 1d | 2012-02-03 A | 2012-02-03 A | 286 | 100% | 2012-02-14 | 2012-02-14 | 0.25d | start no earlier than 2012-01-12 | AP2 | 8h | 8h |
| 288 | 1.2.2.1.19 | **Administrar Negocio** | 4d | 2012-02-06 A | 2012-02-09 A | 282 | 100% | 2012-02-14 | 2012-02-17 | 2.76d |  | AP1 | 88h | 88h |
| 289 | 1.2.2.1.19.1 | Revisar descripción funcional | 1d | 2012-02-06 A | 2012-02-06 A |  | 100% | 2012-02-14 | 2012-02-14 | 0.13d |  | AP2 | 8h | 8h |
| 290 | 1.2.2.1.19.2 | Diagramar arquitectura | 1d | 2012-02-06 A | 2012-02-06 A | 289 | 100% | 2012-02-14 | 2012-02-14 | 0.13d |  | AP2 | 8h | 8h |
| 291 | 1.2.2.1.19.3 | Identificar clases | 1d | 2012-02-06 A | 2012-02-06 A | 290 | 100% | 2012-02-14 | 2012-02-14 | 0.25d |  | AP2 | 8h | 8h |
| 292 | 1.2.2.1.19.4 | Programar jsp con estilos | 3d | 2012-02-06 A | 2012-02-08 A | 291 | 100% | 2012-02-14 | 2012-02-16 | 2d |  | AP2 | 24h | 24h |
| 293 | 1.2.2.1.19.5 | Pruebas unitarias | 1d | 2012-02-09 A | 2012-02-09 A | 292 | 100% | 2012-02-16 | 2012-02-17 | 0.25d |  | AP2 | 8h | 8h |

Notes:
- 270: La funcionalidad "Administrar Responsable" no estuvo en el RFP, sino "Administrar Puesto de Trabajo por Responsable"

| ID | WBS | Task | Type | Duration | Start | Finish | Predecessors | Complete | Baseline start | Baseline finish | Baseline duration | Total slack | Free slack | Constraint | Resources | Work | Actual work |
| --- | --- | --- | --- | --- | --- | --- | --- | --- | --- | --- | --- | --- | --- | --- | --- | --- | --- |
| 294 | 1.2.2.1.20 | **Creación de equivalencias de Grupo de muestras QCX** |  | 4d | 2012-04-04 A | 2012-04-11 A | 288 | 100% | 2012-02-17 | 2012-02-23 | 4.01d |  |  |  | AP1 | 88h | 88h |
| 295 | 1.2.2.1.20.1 | Revisar descripción funcional |  | 1d | 2012-04-04 A | 2012-04-04 A |  | 100% | 2012-02-17 | 2012-02-17 | 0.13d |  |  |  | AP1 | 8h | 8h |
| 296 | 1.2.2.1.20.2 | Diagramar arquitectura |  | 1d | 2012-04-04 A | 2012-04-04 A | 295 | 100% | 2012-02-17 | 2012-02-17 | 0.25d |  |  |  | AP1 | 8h | 8h |
| 297 | 1.2.2.1.20.3 | Identificar clases |  | 1d | 2012-04-04 A | 2012-04-04 A | 296 | 100% | 2012-02-17 | 2012-02-17 | 0.38d |  |  |  | AP1 | 8h | 8h |
| 298 | 1.2.2.1.20.4 | Programar jsp con estilos |  | 3d | 2012-04-04 A | 2012-04-10 A | 297 | 100% | 2012-02-17 | 2012-02-22 | 3d |  |  |  | AP1 | 24h | 24h |
| 299 | 1.2.2.1.20.5 | Pruebas unitarias |  | 1d | 2012-04-11 A | 2012-04-11 A | 298 | 100% | 2012-02-22 | 2012-02-23 | 0.25d |  |  |  | AP1 | 8h | 8h |
| 300 | 1.2.2.1.21 | **Reporte Consolidado en Archivo (premezclados)** |  | 5d | 2012-04-04 A | 2012-04-12 A | 294 | 100% | 2012-02-23 | 2012-02-28 | 3.89d |  |  |  | AP1 | 120h | 120h |
| 301 | 1.2.2.1.21.1 | Revisar descripción funcional |  | 1d | 2012-04-04 A | 2012-04-04 A |  | 100% | 2012-02-23 | 2012-02-23 | 0.13d |  |  | start no earlier than 2012-01-05 | AP1 | 8h | 8h |
| 302 | 1.2.2.1.21.2 | Identificar clases |  | 1d | 2012-04-04 A | 2012-04-04 A | 301 | 100% | 2012-02-23 | 2012-02-23 | 0.13d |  |  | start no earlier than 2012-01-05 | AP1 | 8h | 8h |
| 303 | 1.2.2.1.21.3 | Diagramar arquitectura |  | 1d | 2012-04-04 A | 2012-04-04 A | 302 | 100% | 2012-02-23 | 2012-02-23 | 0.13d |  |  | start no earlier than 2012-01-05 | AP1 | 8h | 8h |
| 304 | 1.2.2.1.21.4 | Programar jsp con estilos |  | 1d | 2012-04-04 A | 2012-04-04 A | 303 | 100% | 2012-02-23 | 2012-02-27 | 2d |  |  | start no earlier than 2012-01-05 | AP1 | 8h | 8h |
| 305 | 1.2.2.1.21.5 | Programar generación de excel |  | 4d | 2012-04-04 A | 2012-04-11 A | 304 | 100% | 2012-02-27 | 2012-02-28 | 1d |  |  | start no earlier than 2012-01-09 | AP1 | 32h | 32h |
| 306 | 1.2.2.1.21.6 | Pruebas unitarias |  | 1d | 2012-04-12 A | 2012-04-12 A | 305 | 100% | 2012-02-28 | 2012-02-28 | 0.25d |  |  | start no earlier than 2012-01-10 | AP1 | 8h | 8h |
| 307 | 1.2.2.1.21.7 | Optimizar tiempo de respuesta |  | 1d | 2012-04-12 A | 2012-04-12 A | 306 | 100% | 2012-02-28 | 2012-02-28 | 0.25d |  |  | start no earlier than 2012-01-10 | AP1 | 8h | 8h |
| 308 | 1.2.2.1.22 | **Gráfico de Tendencia de Reporte Específico Consolidado y Control diario** |  | 7.01d | 2012-04-30 | 2012-05-10 | 345 |  | 2012-03-14 | 2012-03-23 | 7.01d | 9.48d | 0d |  | AP1 | 88.16h |  |
| 309 | 1.2.2.1.22.1 | Revisar descripción funcional |  | 0.13d | 2012-04-30 | 2012-04-30 |  |  | 2012-03-14 | 2012-03-14 | 0.13d | 9.48d | 0d |  | AP2 | 1.04h |  |
| 310 | 1.2.2.1.22.2 | Identificar clases |  | 0.38d | 2012-04-30 | 2012-04-30 | 309 |  | 2012-03-14 | 2012-03-15 | 0.38d | 9.48d | 0d |  | AP2 | 3.04h |  |
| 311 | 1.2.2.1.22.3 | Diagramar arquitectura |  | 0.25d | 2012-04-30 | 2012-05-02 | 310 |  | 2012-03-15 | 2012-03-15 | 0.25d | 9.48d | 0d |  | AP2 | 2h |  |
| 312 | 1.2.2.1.22.4 | Programar jsp con estilos |  | 3d | 2012-05-02 | 2012-05-07 | 311 |  | 2012-03-15 | 2012-03-20 | 3d | 9.48d | 0d |  | AP2 | 24h |  |
| 313 | 1.2.2.1.22.5 | Pruebas unitarias |  | 0.25d | 2012-05-07 | 2012-05-07 | 312 |  | 2012-03-20 | 2012-03-20 | 0.25d | 9.48d | 0d |  | AP2 | 2h |  |
| 314 | 1.2.2.1.22.6 | Tiempo por compensación de 1 funcionalidad retirada |  | 3d | 2012-05-07 | 2012-05-10 | 313 |  | 2012-03-20 | 2012-03-23 | 3d | 9.48d |  |  |  |  |  |
| 316 | 1.2.2.1.22.7 | Revisar descripción funcional | milestone | 0d | 2012-05-10 | 2012-05-10 |  |  | 2012-03-23 | 2012-03-23 | 0d | 9.48d | 0d |  |  |  |  |
| 317 | 1.2.2.1.22.8 | Diagramar arquitectura | milestone | 0d | 2012-05-10 | 2012-05-10 | 316 |  | 2012-03-23 | 2012-03-23 | 0d | 9.48d | 0d |  |  |  |  |
| 318 | 1.2.2.1.22.9 | Identificar clases | milestone | 0d | 2012-05-10 | 2012-05-10 | 317 |  | 2012-03-23 | 2012-03-23 | 0d | 9.48d | 0d |  |  |  |  |
| 319 | 1.2.2.1.22.10 | Programar jsp con estilos | milestone | 0d | 2012-05-10 | 2012-05-10 | 318 |  | 2012-03-23 | 2012-03-23 | 0d | 9.48d | 0d |  |  |  |  |
| 320 | 1.2.2.1.22.11 | Pruebas unitarias | milestone | 0d | 2012-05-10 | 2012-05-10 | 319 |  | 2012-03-23 | 2012-03-23 | 0d | 9.48d | 0d |  |  |  |  |
| 321 | 1.2.2.1.22.12 | Optimizar tiempo de respuesta | milestone | 0d | 2012-05-10 | 2012-05-10 | 320 |  | 2012-03-23 | 2012-03-23 | 0d | 9.48d |  |  |  |  |  |
| 323 | 1.2.2.1.22.13 | Revisar descripción funcional | milestone | 0d | 2012-04-20 | 2012-04-20 |  |  | 2012-03-20 | 2012-03-20 | 0d | 11.74d | 0d |  |  |  |  |
| 324 | 1.2.2.1.22.14 | Diagramar arquitectura | milestone | 0d | 2012-04-20 | 2012-04-20 | 323 |  | 2012-03-20 | 2012-03-20 | 0d | 11.74d | 0d |  |  |  |  |
| 325 | 1.2.2.1.22.15 | Identificar clases | milestone | 0d | 2012-04-20 | 2012-04-20 | 324 |  | 2012-03-20 | 2012-03-20 | 0d | 11.74d | 0d |  |  |  |  |
| 326 | 1.2.2.1.22.16 | Programar jsp con estilos | milestone | 0d | 2012-04-20 | 2012-04-20 | 325 |  | 2012-03-20 | 2012-03-20 | 0d | 11.74d | 0d |  |  |  |  |
| 327 | 1.2.2.1.22.17 | Pruebas unitarias | milestone | 0d | 2012-04-20 | 2012-04-20 | 326 |  | 2012-03-20 | 2012-03-20 | 0d | 11.74d | 0d |  |  |  |  |
| 328 | 1.2.2.1.22.18 | Optimizar tiempo de respuesta | milestone | 0d | 2012-04-20 | 2012-04-20 | 327 |  | 2012-03-20 | 2012-03-20 | 0d | 11.74d |  |  |  |  |  |
| 330 | 1.2.2.1.22.19 | Revisar descripción funcional | milestone | 0d | 2012-04-20 | 2012-04-20 |  |  | 2012-03-20 | 2012-03-20 | 0d | 11.74d | 0d |  | AP2 |  |  |
| 331 | 1.2.2.1.22.20 | Identificar clases | milestone | 0d | 2012-04-20 | 2012-04-20 | 330 |  | 2012-03-20 | 2012-03-20 | 0d | 11.74d | 0d |  | AP2 |  |  |
| 332 | 1.2.2.1.22.21 | Diagramar arquitectura | milestone | 0d | 2012-04-20 | 2012-04-20 | 331 |  | 2012-03-20 | 2012-03-20 | 0d | 11.74d | 0d |  | AP2 |  |  |
| 333 | 1.2.2.1.22.22 | Programar jsp con estilos | milestone | 0d | 2012-04-20 | 2012-04-20 | 332 |  | 2012-03-20 | 2012-03-20 | 0d | 11.74d | 0d |  | AP2 |  |  |
| 334 | 1.2.2.1.22.23 | Pruebas unitarias | milestone | 0d | 2012-04-20 | 2012-04-20 | 333 |  | 2012-03-20 | 2012-03-20 | 0d | 11.74d |  |  | AP2 |  |  |

Notes:
- 308: -Despues de haber solicitado la definición final de este requerimiento desde setiembre del 2011 a marzo del 2012, se envió la definición el 22.03.12. / -El mismo 22.03.12, enviamos consultas acerca de la nueva def.
- 314: -De los tres reportes eliminados del alcance, un reporte estaba asignado al recurso AP1, por lo que, de acuerdo a lo coordinado, la duración del control de cambios número 20 sería canjeada por la duración de esos reportes eliminados. Para efectos de ajuste deL cronograma, se está tomando esta actividad para compensarla con la duración de un reporte eliminado.

| ID | WBS | Task | Duration | Start | Finish | Predecessors | Complete | Remaining | Baseline start | Baseline finish | Baseline duration | Total slack | Free slack | Resources | Work | Actual work |
| --- | --- | --- | --- | --- | --- | --- | --- | --- | --- | --- | --- | --- | --- | --- | --- | --- |
| 335 | 1.2.2.1.23 | **Gestión de stock de pre-fabricados, DINO** | 12d | 2012-03-07 A | 2012-03-22 A | 276 | 100% |  | 2012-02-22 | 2012-02-28 | 3.25d |  |  | AP2 | 192h | 192h |
| 336 | 1.2.2.1.23.1 | Reestructurar funcionalidad Administrar Lote | 9d | 2012-03-07 A | 2012-03-19 A |  | 100% |  | 2012-02-22 | 2012-02-27 | 3d |  |  | AP2 | 72h | 72h |
| 337 | 1.2.2.1.23.2 | Pruebas unitarias | 3d | 2012-03-20 A | 2012-03-22 A | 336 | 100% |  | 2012-02-27 | 2012-02-28 | 0.25d |  |  | AP2 | 24h | 24h |
| 338 | 1.2.2.1.24 | **Envio de Lotes de Prefabricados a SAP** | 18d | 2012-03-26 A | 2012-04-20 | 335 | 99% | 0.01d | 2012-02-28 | 2012-03-20 | 15.67d | 11.74d | 0d | AP2 | 352h | 351.87h |
| 339 | 1.2.2.1.24.1 | Revisar descripción funcional | 1d | 2012-03-26 A | 2012-03-26 A |  | 100% |  | 2012-02-28 | 2012-02-28 | 0.13d |  |  | AP2 | 8h | 8h |
| 340 | 1.2.2.1.24.2 | Diagramar arquitectura | 1d | 2012-03-26 A | 2012-03-26 A | 339 | 100% |  | 2012-02-28 | 2012-02-28 | 0.13d |  |  | AP2 | 8h | 8h |
| 341 | 1.2.2.1.24.3 | Identificar clases | 1d | 2012-03-26 A | 2012-03-26 A | 340 | 100% |  | 2012-02-28 | 2012-02-28 | 0.13d |  |  | AP2 | 8h | 8h |
| 342 | 1.2.2.1.24.4 | Programar jsp y estilos | 17d | 2012-03-26 A | 2012-04-19 A | 341 | 100% |  | 2012-02-28 | 2012-03-09 | 8d |  |  | AP2 | 136h | 136h |
| 343 | 1.2.2.1.24.5 | Programar RFC | 5d | 2012-03-26 A | 2012-03-30 A | 342 | 100% |  | 2012-03-09 | 2012-03-16 | 5d |  |  | AP2 | 40h | 40h |
| 344 | 1.2.2.1.24.6 | Pruebas unitarias | 1d | 2012-04-20 A | 2012-04-20 | 343 | 99% | 0.01d | 2012-03-16 | 2012-03-20 | 2.28d | 11.74d |  | AP2 | 8h | 7.92h |
| 345 | 1.2.2.1.25 | **Re-configurar los formatos de granulometría / Recalcular Curva Granulométrica** | 32.25d | 2012-03-13 A | 2012-04-30 | 300 | 64% | 11.68d | 2012-02-28 | 2012-03-14 | 10.88d | 9.48d | 0d | AP1 | 374h | 207.97h |
| 346 | 1.2.2.1.25.1 | Revisar descripción funcional | 1d | 2012-03-13 A | 2012-03-13 A |  | 100% |  | 2012-02-28 | 2012-02-29 | 0.25d |  |  | AP1 | 8h | 8h |
| 347 | 1.2.2.1.25.2 | Diagramar arquitectura | 1d | 2012-03-13 A | 2012-03-13 A | 346 | 100% |  | 2012-02-29 | 2012-02-29 | 0.25d |  |  | AP1 | 8h | 8h |
| 348 | 1.2.2.1.25.3 | Relacionar tablas | 1d | 2012-03-13 A | 2012-03-13 A | 347 | 100% |  | 2012-02-29 | 2012-02-29 | 0.38d |  |  | AP1 | 8h | 8h |
| 349 | 1.2.2.1.25.4 | Programar primer gráfico (Curva granulometrica) | 5d | 2012-03-13 A | 2012-03-19 A | 348 | 100% |  | 2012-02-29 | 2012-03-06 | 3.5d |  |  | AP1 | 40h | 40h |
| 350 | 1.2.2.1.25.5 | Programar segundo gráfico (Grafico de agregados) | 3.5d | 2012-04-23 A | 2012-04-26 | 349 |  | 3.5d | 2012-03-06 | 2012-03-09 | 3.5d | 9.48d | 0d | AP1 | 28h |  |
| 351 | 1.2.2.1.25.6 | Programa jsp y estilos | 2.5d | 2012-03-20 A | 2012-04-27 | 350 | 50% | 1.25d | 2012-03-09 | 2012-03-14 | 2.5d | 9.48d | 0d | AP1 | 20h | 10h |
| 352 | 1.2.2.1.25.7 | Pruebas unitarias | 0.25d | 2012-04-27 | 2012-04-27 | 351 |  |  | 2012-03-14 | 2012-03-14 | 0.25d | 9.48d | 0d | AP1 | 2h |  |
| 353 | 1.2.2.1.25.8 | Optimizar tiempo de respuesta | 0.25d | 2012-04-30 | 2012-04-30 | 352 |  |  | 2012-03-14 | 2012-03-14 | 0.25d | 9.48d |  | AP1 | 2h |  |
| 354 | 1.2.2.2 | **Control de cambios** | 69d | 2012-01-09 A | 2012-04-16 |  | 91% | 6.47d | 2012-03-23 | 2012-04-24 | 20.13d | 0d |  |  | 208h | 192h |
| 355 | 1.2.2.2.1 | **ID generico en molienda cemento compósito** | 1d | 2012-01-09 A | 2012-01-09 A |  | 100% |  | 2012-03-23 | 2012-03-26 | 0.63d |  |  | AP1 | 8h | 8h |
| 356 | 1.2.2.2.1.1 | Analizar impacto | 1d | 2012-01-09 A | 2012-01-09 A |  | 100% |  | 2012-03-23 | 2012-03-23 | 0.13d |  |  |  |  |  |
| 357 | 1.2.2.2.1.2 | Programar | 1d | 2012-01-09 A | 2012-01-09 A | 356 | 100% |  | 2012-03-23 | 2012-03-26 | 0.25d |  |  |  |  |  |
| 358 | 1.2.2.2.1.3 | Realizar Prueba Unitarias | 1d | 2012-01-09 A | 2012-01-09 A | 357 | 100% |  | 2012-03-26 | 2012-03-26 | 0.25d |  |  |  |  |  |

Notes:
- 335: El 05.01.12 y 06.01.12: soporte incidencia postproducción fase 1 / El 10.01.12 Se dejó de implementar el requerimiento, porque el usuario no está disponible para terminar de definir el requerimiento. Las coordinaciones se realizaron hasta el 25.01.12, en que finalmente se cerró la definición funcional. / El 11.01.12: soporte a incidencia / -Al 04.04.12: Seguimos sin tener respuesta de la confirmación por parte de E.Pacheco acerca de cambios en la base de datos que impactan en este requerimiento.
- 338: Está como control de cambios, porque el alcance es mayor al estimado inicialmente / -13.03.12: En reunión R.Narro, explicó al programador ABAP, acerca de 2 transacciones en SAP, y agregó un control de cambios a SAC. / -14.03.12: En reunión con R.Narro nos dijo faltaba definir algunos parrafos expresados en la definición funcional con F.Gastanaudi, además faltó explicar otras transacciones en SAP. / -15.03.12: Está pendiente enviar cuadro de equivalencias y definir transacciones en SAP / -16.03.12: Se definieron transacciones en SAP, sin embargo, continúa pendiente envío de cuadro de equivalencias y confirmar una definición por parte del usuario. Esta definición consiste en la validación que hace SAC para cuando se quiera anular lotes del mes anterior. / -Al 04.04.12: Seguimos sin tener respuesta a las siguientes consultas: Se revisó el cuadro de equivalencias y se identificó que está pendiente la equivalencia entre el código de SAC y el código de material. Tambien está pendiente que se confirme la definición de eliminación del lote por parte de E.Pacheco. Asimismo, confirmar qué se hará con los lotes antiguos que no han sido transferidos a SAP. / -Al 09.04.12: Seguimos sin tener respuesta a las consultas de la gestión de lotes antiguos y equivalencias del código de material del SAC y SAP. / -Al 13.04.12: Siguen sin proporcionar información de las equivalencias, por lo que no podemos hacer nuestras pruebas unitarias. / -Al 16.04.12: Enviaron los códigos de material equivalentes al codigo de producto en el SAC. Falta certificar que la integración se realice de manera exitosa con esta data proporcionada. / -El 18.04.12: Enviamos correo electrónico haciendo unas consultas acerca de las validaciones del lote, en la funcionalidad Administrar Lote. Recien el 23.04.12 obtuvimos respuesta parcial, seguimos a la espera de que puedan absolver todas las preguntas, para culminar nuestras pruebas con esta casuística.
- 345: Está como control de cambios, porque el alcance es mayor al estimado inicialmente / -El 06.03.12, En reunión con F.Gastañaudi, se comprometió a enviar un cuadro con las especificaciones y sus valores. Las especificaciones son: Fuller, ACI 403, ESP DIN, etc. / -14.03.12: Enviamos correo a R.Narro porque encontramos data en la base de datos que el usuario nos había dicho que no estaba y era fija, por ejemplo los tamices, que son tipos de ensayo y sus valores minimos y maximos. Asimismo queremos saber la relación completa entre los tamices y los valores de abertura, según lo que están en la BD. / -14.03.12, tambien se solicitó especifiquen la relación de productos que solicitan se agregue al proceso "Recepción y Almacenaje de M.P", en vista de que hemos encontrado en la base de datos que hay productos que pueden ser equivalentes a los Husos. / -Al 16.03.12, seguimos sin tener respuesta a lo solicitado. / -El 20.03.12: Hemos empezado a implementar el segundo gráfico, pero aun seguimos sin tener respuesta del usuario y han surgido más dudas en cuanto a lo indicado en la definición funcional y en lo encontrado en la base de datos y diseño de la funcionalidad. / -A la fecha 22.03.12, seguimos sin tener respuesta a las preguntas. Se está avanzando con la interfaz, y asociando la información que se tiene. / -Al 23.03.12: se coordinó una reunión con los usuarios para el 27.03.12, por falta de disponibilidad de los mismos, para despejar las dudas del negocio y de la aplicación encontradas. Por este motivo la implementación, quedó pendiente, se procedió a avanzar con Envío de lotes prefabricados a SAP. / -Al 29.03.12: Se despejaron las dudas relacionadas al negocio, sin embargo sigue pendiente la confirmación y/o definición de algunos temas técnicos relacionados a la base de datos. / -Al 09.04.12: Sigue pendiente la confirmación y/o definición de algunos temas técnicos relacionados a la base de datos. / -El 23.04.12: Se retomó la implementación de este requerimiento, ahora que ya se tiene mayor información funcional y técnica para poder desarrollar.

| ID | WBS | Task | Type | Duration | Start | Finish | Predecessors | Complete | Baseline start | Baseline finish | Baseline duration | Total slack | Resources | Work | Actual work |
| --- | --- | --- | --- | --- | --- | --- | --- | --- | --- | --- | --- | --- | --- | --- | --- |
| 359 | 1.2.2.2.2 | **Mostrar los valores de U.M y el promedio (Reporte Consolidado en Archivo)** |  | 6d | 2012-01-10 A | 2012-01-17 A | 355 | 100% | 2012-03-26 | 2012-03-30 | 4d |  | AP1 | 48h | 48h |
| 360 | 1.2.2.2.2.1 | Implementar clase existente |  | 5d | 2012-01-10 A | 2012-01-16 A |  | 100% | 2012-03-26 | 2012-03-29 | 3d |  |  |  |  |
| 361 | 1.2.2.2.2.2 | Realizar Pruebas Unitarias |  | 1d | 2012-01-17 A | 2012-01-17 A | 360 | 100% | 2012-03-29 | 2012-03-30 | 1d |  |  |  |  |
| 362 | 1.2.2.2.3 | **Impacto en funcionalidades que manejan ID Lote** |  | 2d | 2012-03-22 A | 2012-03-23 A | 202 | 100% | 2012-04-03 | 2012-04-09 | 2d |  | AP2 | 16h | 16h |
| 363 | 1.2.2.2.3.1 | Implementar funcionalidad |  | 2d | 2012-03-22 A | 2012-03-23 A |  | 100% | 2012-04-03 | 2012-04-09 | 2d |  |  |  |  |
| 364 | 1.2.2.2.3.2 | Realizar pruebas unitarias |  | 1d | 2012-03-23 A | 2012-03-23 A |  | 100% | 2012-04-03 | 2012-04-09 | 2d |  |  |  |  |
| 365 | 1.2.2.2.4 | **Modificar funcionalidad "Detalle de Ensayo" para que presente las unidades de muestra sin redondeo a la decena** |  | 3d | 2012-03-22 A | 2012-03-26 A | 359 | 100% | 2012-03-30 | 2012-04-04 | 3d |  | AP1 | 24h | 24h |
| 366 | 1.2.2.2.4.1 | Implementar funcionalidad |  | 2d | 2012-03-22 A | 2012-03-23 A |  | 100% | 2012-03-30 | 2012-04-04 | 3d |  |  |  |  |
| 367 | 1.2.2.2.4.2 | Realizar pruebas unitarias |  | 1d | 2012-03-26 A | 2012-03-26 A |  | 100% | 2012-03-30 | 2012-04-04 | 3d |  |  |  |  |
| 368 | 1.2.2.2.5 | **Mostrar cantidad de decimales de acuerdo a configuración en tabla tipo de ensayo** |  | 9d | 2012-03-15 A | 2012-03-27 A | 365 | 100% | 2012-04-04 | 2012-04-20 | 10d |  | AP1 | 72h | 72h |
| 369 | 1.2.2.2.5.1 | Implementar funcionalidad |  | 9d | 2012-03-15 A | 2012-03-27 A |  | 100% | 2012-04-04 | 2012-04-20 | 10d |  |  |  |  |
| 370 | 1.2.2.2.5.2 | Realizar pruebas unitarias |  | 1d | 2012-03-27 A | 2012-03-27 A |  | 100% | 2012-04-04 | 2012-04-20 | 10d |  |  |  |  |
| 371 | 1.2.2.2.6 | **Agregar 3 campos Centro, Almacen e Imputación, en Administrar Planta, en el registro y modificación** |  | 1d | 2012-04-16 A | 2012-04-16 A | 362 | 100% | 2012-04-09 | 2012-04-10 | 0.5d |  | AP2 | 8h | 8h |
| 372 | 1.2.2.2.6.1 | Implementar funcionalidad |  | 8h | 2012-04-16 A | 2012-04-16 A |  | 100% | 2012-04-09 | 2012-04-10 | 3h |  |  |  |  |
| 373 | 1.2.2.2.6.2 | Realizar pruebas unitarias | milestone | 0h | 2012-04-16 A | 2012-04-16 A | 372 | 100% | 2012-04-10 | 2012-04-10 | 1h |  |  |  |  |
| 374 | 1.2.2.2.7 | **Agregar validación para que no liste valores anulados por dispersión** |  | 1d | 2012-03-22 A | 2012-03-22 A | 368 | 100% | 2012-04-20 | 2012-04-20 | 0.5d |  | AP1 | 8h | 8h |
| 375 | 1.2.2.2.7.1 | Implementar funcionalidad |  | 8h | 2012-03-22 A | 2012-03-22 A |  | 100% | 2012-04-20 | 2012-04-20 | 3h |  |  |  |  |
| 376 | 1.2.2.2.7.2 | Realizar pruebas unitarias |  | 8h | 2012-03-22 A | 2012-03-22 A | 375 | 100% | 2012-04-20 | 2012-04-20 | 1h |  |  |  |  |
| 377 | 1.2.2.2.8 | **Agregar campo Codigo de Material en el ingresar y modificar de Administrar Producto** |  | 1d | 2012-04-16 A | 2012-04-16 A | 371 | 100% | 2012-04-10 | 2012-04-10 | 0.5d |  | AP2 | 8h | 8h |
| 378 | 1.2.2.2.8.1 | Implementar funcionalidad |  | 8h | 2012-04-16 A | 2012-04-16 A |  | 100% | 2012-04-10 | 2012-04-10 | 3h |  |  |  |  |
| 379 | 1.2.2.2.8.2 | Realizar pruebas unitarias | milestone | 0h | 2012-04-16 A | 2012-04-16 A | 378 | 100% | 2012-04-10 | 2012-04-10 | 1h |  |  |  |  |
| 380 | 1.2.2.2.9 | **Agregar matriz,GTE, tipo de ensayo - Realizar generación dinámica de gráfico de combinación de agregados** |  | 2d | 2012-03-23 | 2012-03-26 | 374 |  | 2012-04-20 | 2012-04-24 | 2d | 13d | AP1 | 16h |  |
| 381 | 1.2.2.2.9.1 | Implementar funcionalidad |  | 2d | 2012-03-23 | 2012-03-26 |  |  | 2012-04-20 | 2012-04-24 | 2d | 13d |  |  |  |
| 382 | 1.2.2.2.9.2 | Realizar pruebas unitarias |  | 1d | 2012-03-23 | 2012-03-23 |  |  | 2012-04-20 | 2012-04-23 | 1d | 1d |  |  |  |

Notes:
- 368: -Al 27.03.12: El programador habló con el usuario, acerca de la funcionalidad consultar ensayo en función del tiempo, respecto a la solicitud de respetar los decimales asignados por tipo de ensayo. Sin embargo, para aquellos tipos de ensayo que por defecto tienen 3 decimales, y el valor de uno de estos sólo tiene un decimal, no se ha podido determinar agregarle ceros a la derecha para cumplir con la regla, en vista de que el grafico devuelve valores de tipo bigdecimal, y forzar un cambio impactaría en la estructura de la librería. / Estamos a la espera de la confirmación por parte de CPSAA.

| ID | WBS | Task | Duration | Start | Finish | Predecessors | Baseline start | Baseline finish | Baseline duration | Total slack | Free slack | Constraint | Resources | Work |
| --- | --- | --- | --- | --- | --- | --- | --- | --- | --- | --- | --- | --- | --- | --- |
| 383 | 1.2.2.3 | **Documentar Casos de Prueba** | 6d | 2012-05-10 | 2012-05-18 | 202 | 2012-04-03 | 2012-04-13 | 6d | 9.48d | 0d |  |  | 48h |
| 384 | 1.2.2.3.1 | Realizar Casos de Prueba de Funcionalidades por Mejorar | 1d | 2012-05-10 | 2012-05-11 |  | 2012-04-03 | 2012-04-04 | 1d | -3.52d | 0d |  | AP2 | 8h |
| 385 | 1.2.2.3.2 | Realizar Casos de Prueba de Funcionalidades Nuevas | 2d | 2012-05-11 | 2012-05-15 | 384 | 2012-04-04 | 2012-04-10 | 2d | -3.52d | 0d |  | AP2 | 16h |
| 386 | 1.2.2.3.3 | Realizar Casos de Prueba de Funcionalidades Premezclados | 3d | 2012-05-15 | 2012-05-18 | 385 | 2012-04-10 | 2012-04-13 | 3d | -3.52d | 0d | start no earlier than 2011-08-29 | AP2 | 24h |
| 387 | 1.2.2.4 | **Documentar Arquitectura** | 2.64d | 2012-05-18 | 2012-05-22 | 383 | 2012-04-13 | 2012-04-18 | 2.64d | 9.48d |  |  |  | 21.12h |
| 388 | 1.2.2.4.1 | Realizar Modelo de Casos de Uso del Sistema | 0.63d | 2012-05-18 | 2012-05-18 |  | 2012-04-13 | 2012-04-16 | 0.63d | -3.52d | 0d |  | AP2 | 5.04h |
| 389 | 1.2.2.4.2 | Realizar Documentos de Análisis y Diseño | 1d | 2012-05-18 | 2012-05-21 | 388 | 2012-04-16 | 2012-04-17 | 1d | -3.52d | 0d |  | AP2 | 8h |
| 390 | 1.2.2.4.3 | Realizar Estándares del Sistema | 0.38d | 2012-05-21 | 2012-05-22 | 389 | 2012-04-17 | 2012-04-17 | 0.38d | -3.52d | 0d |  | AP2 | 3.04h |
| 391 | 1.2.2.4.4 | Realizar Prototipo del Sistema | 0.25d | 2012-05-22 | 2012-05-22 | 390 | 2012-04-17 | 2012-04-18 | 0.25d | -3.52d | 0d |  | AP2 | 2h |
| 392 | 1.2.2.4.5 | Realizar Diccionario de Datos | 0.38d | 2012-05-22 | 2012-05-22 | 391 | 2012-04-18 | 2012-04-18 | 0.38d | -3.52d | 0d |  | AP2 | 3.04h |
| 393 | 1.2.2.5 | **Integración de Módulos** | 6.88d | 2012-04-17 | 2012-04-25 | 380, 377 | 2012-04-24 | 2012-05-04 | 6.88d | 0d |  |  | AP1; AP2 | 220.16h |
| 394 | 1.2.2.5.1 | **Integrar funcionalidades nuevas** | 2d | 2012-04-17 | 2012-04-18 |  | 2012-04-24 | 2012-04-26 | 2d | 0d |  |  | AP1 | 32h |
| 395 | 1.2.2.5.1.1 | Revisar clases por integrar | 0.5d | 2012-04-17 | 2012-04-17 |  | 2012-04-24 | 2012-04-25 | 0.5d | 0d |  |  | AP1 | 4h |
| 396 | 1.2.2.5.1.2 | Integrar código | 0.5d | 2012-04-17 | 2012-04-17 | 395 | 2012-04-25 | 2012-04-25 | 0.5d | 0d |  |  | AP1 | 4h |
| 397 | 1.2.2.5.1.3 | Probar integración del código | 0.5d | 2012-04-18 | 2012-04-18 | 396 | 2012-04-25 | 2012-04-26 | 0.5d | 0d |  |  | AP1 | 4h |
| 398 | 1.2.2.5.1.4 | Hacer pruebas funcionales de integración | 0.5d | 2012-04-18 | 2012-04-18 | 397 | 2012-04-26 | 2012-04-26 | 0.5d | 0d |  |  | AP1 | 4h |
| 399 | 1.2.2.5.2 | **Integrar funcionalidades por mejorar** | 2.38d | 2012-04-19 | 2012-04-23 | 394 | 2012-04-26 | 2012-05-02 | 2.38d | 0d |  |  | AP1 | 38.08h |
| 400 | 1.2.2.5.2.1 | Revisar clases por integrar | 0.38d | 2012-04-19 | 2012-04-19 |  | 2012-04-26 | 2012-04-27 | 0.38d | 0d |  |  | AP1 | 3.04h |
| 401 | 1.2.2.5.2.2 | Integrar código | 1d | 2012-04-19 | 2012-04-20 | 400 | 2012-04-27 | 2012-04-30 | 1d | 0d |  |  | AP1 | 8h |
| 402 | 1.2.2.5.2.3 | Probar integración del código | 0.5d | 2012-04-20 | 2012-04-20 | 401 | 2012-04-30 | 2012-04-30 | 0.5d | 0d |  |  | AP1 | 4h |
| 403 | 1.2.2.5.2.4 | Hacer pruebas funcionales de integración | 0.5d | 2012-04-20 | 2012-04-23 | 402 | 2012-04-30 | 2012-05-02 | 0.5d | 0d |  |  | AP1 | 4h |
| 404 | 1.2.2.5.3 | **Integrar funcionalidades premezclados** | 2.5d | 2012-04-23 | 2012-04-25 | 399 | 2012-05-02 | 2012-05-04 | 2.5d | 0d |  |  | AP1 | 40h |
| 405 | 1.2.2.5.3.1 | Revisar clases por integrar | 0.5d | 2012-04-23 | 2012-04-23 |  | 2012-05-02 | 2012-05-02 | 0.5d | 0d |  |  | AP1 | 4h |
| 406 | 1.2.2.5.3.2 | Integrar código | 0.5d | 2012-04-23 | 2012-04-24 | 405 | 2012-05-02 | 2012-05-03 | 0.5d | 0d |  |  | AP1 | 4h |
| 407 | 1.2.2.5.3.3 | Probar integración del código | 0.5d | 2012-04-24 | 2012-04-24 | 406 | 2012-05-03 | 2012-05-03 | 0.5d | 0d |  |  | AP1 | 4h |
| 408 | 1.2.2.5.3.4 | Hacer pruebas funcionales de integración | 1d | 2012-04-24 | 2012-04-25 | 407 | 2012-05-03 | 2012-05-04 | 1d | 0d |  |  | AP1 | 8h |

Notes:
- 395: 5 funcionalidades por integrar
- 398: La mayoría de funcionalidades está relacionada con reportes.
- 400: 4 funcionalidades por integrar
- 402: Son 3 funcionalidades que están involucradas con librerías para generación de gráficos.
- 405: 6 funcionalidades por integrar
- 407: Son funcionalidades complejas, en donde están involucrados reportes e integración con SAP

| ID | WBS | Task | Duration | Start | Finish | Predecessors | Baseline start | Baseline finish | Baseline duration | Total slack | Free slack | Constraint | Resources | Work |
| --- | --- | --- | --- | --- | --- | --- | --- | --- | --- | --- | --- | --- | --- | --- |
| 409 | 1.2.2.5.4 | **Integrar funcionalidades Admin. Datos Maestros** | 2.5d | 2012-04-17 | 2012-04-19 |  | 2012-04-24 | 2012-04-27 | 2.5d | 4.38d |  |  |  |  |
| 410 | 1.2.2.5.4.1 | Revisar clases por integrar | 0.5d | 2012-04-17 | 2012-04-17 |  | 2012-04-24 | 2012-04-25 | 0.5d | 4.38d | 0d |  |  |  |
| 411 | 1.2.2.5.4.2 | Integrar código | 0.5d | 2012-04-17 | 2012-04-17 | 410 | 2012-04-25 | 2012-04-25 | 0.5d | 4.38d | 0d |  |  |  |
| 412 | 1.2.2.5.4.3 | Probar integración del código | 0.5d | 2012-04-18 | 2012-04-18 | 411 | 2012-04-25 | 2012-04-26 | 0.5d | 4.38d | 0d |  |  |  |
| 413 | 1.2.2.5.4.4 | Hacer pruebas funcionales de integración | 1d | 2012-04-18 | 2012-04-19 | 412 | 2012-04-26 | 2012-04-27 | 1d | 4.38d |  |  |  |  |
| 414 | 1.2.2.6 | **Fase: Pruebas** | 14.5d | 2012-04-25 | 2012-05-17 | 393 | 2012-05-04 | 2012-05-25 | 14.5d | 0d |  |  | AP1; AP2; CPSAA | 670.08h |
| 415 | 1.2.2.6.1 | Desplegar aplicación en ambiente desarrollo CSTI | 0.25d | 2012-04-25 | 2012-04-26 |  | 2012-05-04 | 2012-05-07 | 0.25d | 0d |  |  | AP2 | 2h |
| 416 | 1.2.2.6.2 | **Pruebas unitarias** | 7d | 2012-04-26 | 2012-05-08 | 415 | 2012-05-07 | 2012-05-16 | 7d | 0d |  |  | AP1 / AP2 | 152h |
| 417 | 1.2.2.6.2.1 | Revisar funcionalidades nuevas AP1 | 1d | 2012-04-26 | 2012-04-27 |  | 2012-05-07 | 2012-05-08 | 1d | 0d |  |  | AP1 | 8h |
| 418 | 1.2.2.6.2.2 | Revisar funcionalidades nuevas AP2 | 1d | 2012-04-26 | 2012-04-27 |  | 2012-05-07 | 2012-05-08 | 1d | 2d | 0d |  | AP2 | 8h |
| 419 | 1.2.2.6.2.3 | Revisar funcionalidades por mejorar | 1d | 2012-04-27 | 2012-04-30 | 417 | 2012-05-08 | 2012-05-09 | 1d | 0d |  |  | AP1 | 8h |
| 420 | 1.2.2.6.2.4 | Revisar funcionalidades premezclados AP1 | 2.5d | 2012-04-30 | 2012-05-03 | 419 | 2012-05-09 | 2012-05-11 | 2.5d | 0d |  | start no earlier than 2011-08-31 | AP1 | 20h |
| 421 | 1.2.2.6.2.5 | Revisar funcionalidades premezclados AP2 | 2d | 2012-04-27 | 2012-05-02 | 418 | 2012-05-08 | 2012-05-10 | 2d | 2d | 0d |  | AP2 | 16h |
| 422 | 1.2.2.6.2.6 | Revisar funcionalidades Admin. Datos Maestros AP1 | 2.5d | 2012-05-03 | 2012-05-08 | 420 | 2012-05-11 | 2012-05-16 | 2.5d | 0d |  |  | AP1 | 20h |
| 423 | 1.2.2.6.2.7 | Revisar funcionalidades Admin. Datos Maestros AP2 | 2d | 2012-05-02 | 2012-05-04 | 421 | 2012-05-10 | 2012-05-14 | 2d | 2d |  |  | AP2 | 16h |
| 424 | 1.2.2.6.3 | Coordinar despliegue en ambiente pruebas CPSAA | 0.25d | 2012-05-08 | 2012-05-08 | 416 | 2012-05-16 | 2012-05-16 | 0.25d | 0d |  |  | AP2 | 2h |
| 425 | 1.2.2.6.4 | **Pruebas integrales** | 7d | 2012-05-08 | 2012-05-17 | 424 | 2012-05-16 | 2012-05-25 | 7d | 0d |  |  |  | 112h |
| 426 | 1.2.2.6.4.1 | Revisar funcionalidades nuevas (A) | 1d | 2012-05-08 | 2012-05-09 |  | 2012-05-16 | 2012-05-17 | 1d | 0d |  |  | AP1; Usuario Lider | 16h |
| 427 | 1.2.2.6.4.2 | Revisar funcionalidades nuevas (B) | 1d | 2012-05-09 | 2012-05-10 | 426 | 2012-05-17 | 2012-05-18 | 1d | 0d |  |  | AP1; Usuario Lider | 16h |
| 428 | 1.2.2.6.4.3 | Revisar funcionalidades por mejorar | 1d | 2012-05-10 | 2012-05-11 | 427 | 2012-05-18 | 2012-05-21 | 1d | 0d |  |  | AP1; Usuario Lider | 16h |
| 429 | 1.2.2.6.4.4 | Revisar funcionalidades premezclados | 2d | 2012-05-11 | 2012-05-15 | 428 | 2012-05-21 | 2012-05-23 | 2d | 0d |  |  | AP1; Usuario Lider | 32h |
| 430 | 1.2.2.6.4.5 | Revisar funcionalidades Admin. Datos Maestros | 2d | 2012-05-15 | 2012-05-17 | 429 | 2012-05-23 | 2012-05-25 | 2d | 0d |  |  | AP1; Usuario Lider | 32h |
| 431 | 1.2.2.6.5 | **Documentacion** | 3.38d | 2012-05-08 | 2012-05-11 | 416 | 2012-05-16 | 2012-05-21 | 3.38d | 3.87d |  |  | AP2 | 54.08h |
| 432 | 1.2.2.6.5.1 | Manual de Usuario | 2d | 2012-05-08 | 2012-05-10 |  | 2012-05-16 | 2012-05-18 | 2d | 3.87d | 0d |  | AP2 | 16h |
| 433 | 1.2.2.6.5.2 | Manual de Instalación y Configuración del Sistema | 0.38d | 2012-05-10 | 2012-05-10 | 432 | 2012-05-18 | 2012-05-18 | 0.38d | 3.87d | 0d |  | AP2 | 3.04h |
| 434 | 1.2.2.6.5.3 | Informe de Capacitación y Pruebas de Aceptación del Cliente | 1d | 2012-05-10 | 2012-05-11 | 433 | 2012-05-18 | 2012-05-21 | 1d | 3.87d |  |  | AP2 | 8h |

Notes:
- 410: 11 funcionalidades: aprox.
- 417: Revisión de 3 funcionalidades.
- 418: Revisión de 2 funcionalidades: Involucra 2 Reportes importantes
- 419: Son 4 funcionalidades: Probar rendimiento de 2 reportes y 1 funcionalidad de modificación y eliminación.
- 420: 4 Funcionalidades
- 421: 3 funcionalides
- 422: 6 Funcionalidades
- 423: 5 funcionalidades
- 426: Se indica "A" para aquellas funcionalidades que están solicitadas por un usuario en particular
- 427: Se indica "B" para aquellas funcionalidades que están solicitadas por un usuario en particular
- 429: Dependemos de la disponibilidad del usuario, implican reportes y funcionalidades integradas con SAP

| ID | WBS | Task | Duration | Start | Finish | Predecessors | Baseline start | Baseline finish | Baseline duration | Total slack | Resources | Work |
| --- | --- | --- | --- | --- | --- | --- | --- | --- | --- | --- | --- | --- |
| 435 | 1.2.2.7 | **Ajustes** | 5d | 2012-05-17 | 2012-05-24 | 414 | 2012-05-25 | 2012-06-01 | 5d | 0d |  | 72h |
| 436 | 1.2.2.7.1 | Presentar formalmente observaciones | 1d | 2012-05-17 | 2012-05-18 |  | 2012-05-25 | 2012-05-28 | 1d | 0d | Usuario Lider | 8h |
| 437 | 1.2.2.7.2 | Evaluar observaciones | 1d | 2012-05-18 | 2012-05-21 | 436 | 2012-05-28 | 2012-05-29 | 1d | 0d | AP1; AP2 | 16h |
| 438 | 1.2.2.7.3 | Programar correcciones | 3d | 2012-05-21 | 2012-05-24 | 437 | 2012-05-29 | 2012-06-01 | 3d | 0d | AP1; AP2 | 48h |
| 439 | 1.2.2.8 | **Fase: Pase a producción** | 1d | 2012-05-24 | 2012-05-25 | 435 | 2012-06-01 | 2012-06-04 | 1d | 0d |  | 16h |
| 440 | 1.2.2.8.1 | **Pase a producción** | 1d | 2012-05-24 | 2012-05-25 |  | 2012-06-01 | 2012-06-04 | 1d | 0d | AP1 | 16h |
| 441 | 1.2.2.8.1.1 | Implementar sistema en producción | 1d | 2012-05-24 | 2012-05-25 |  | 2012-06-01 | 2012-06-04 | 1d | 0d | AP1 | 8h |
| 442 | 1.2.2.9 | **Fase: Capacitación** | 2d | 2012-05-25 | 2012-05-29 | 439 | 2012-06-04 | 2012-06-06 | 2d | 0d |  | 48h |
| 443 | 1.2.2.9.1 | **Capacitación a usuarios** | 2d | 2012-05-25 | 2012-05-29 |  | 2012-06-04 | 2012-06-06 | 2d | 0d |  | 48h |
| 444 | 1.2.2.9.1.1 | Preparar material | 1d | 2012-05-25 | 2012-05-28 |  | 2012-06-04 | 2012-06-05 | 1d | 1d | AP1; AL | 16h |
| 445 | 1.2.2.9.1.2 | Capacitar a usuarios | 2d | 2012-05-25 | 2012-05-29 |  | 2012-06-04 | 2012-06-06 | 2d | 0d | AP1; AL | 32h |
| 446 | 1.2.2.10 | **Fase: Post-Produccion** | 5d | 2012-05-29 | 2012-06-05 | 442 | 2012-06-06 | 2012-06-13 | 5d | 0d |  |  |
| 447 | 1.2.2.10.1 | Programar correcciones | 5d | 2012-05-29 | 2012-06-05 |  | 2012-06-06 | 2012-06-13 | 5d | 0d |  |  |

Notes:
- 435: Etapa en la que el usuario indica sus observaciones en cuando al desempeño funcional y técnico del requerimiento implementado, por lo que el programador, deberá corregir el error técnico pero primero debe ser evaluado.
- 438: Dependerá de la implicancia de los cambios
